Schedule from MS Project, 2019-10-08 to 2020-01-16, A marks actual dates.
Microsoft

## Calendars

- 标准: Mon-Fri 08:00-12:00, 13:00-17:00; Sat-Sun off. Exceptions (off unless hours are given): 2020-01-01 (2020年元旦, recurring).

## Resources

| Resource |
| --- |
| 杨迎 |
| 文超 |
| 罗荣熙 |
| 刘振兴 |
| 产品研发团队 |
| 莫世坚 |
| 产品测试团队 |
| 产品研发 |
| 卢毅 |
| 待定 |
| 杨朝辉 |
| 郑海文 |

## Schedule

| ID | WBS | Task | Type | Duration | Start | Finish | Predecessors | Complete | Remaining | Total slack | Resources | Work | Actual work |
| --- | --- | --- | --- | --- | --- | --- | --- | --- | --- | --- | --- | --- | --- |
| 1 | 1 | **MCP标准版V1.2迭代** |  | 72d | 2019-10-08 09:00 A | 2020-01-16 09:00 |  | 24% | 54.81d | 0d |  | 2308h | 568h |
| 2 | 1.1 | **ERP接入标准接口** |  | 19.5d | 2019-10-08 09:00 A | 2019-11-01 14:00 |  | 81% | 3.74d | 52.5d |  | 280h | 240h |
| 3 | 1.1.1 | **后端技术研究** |  | 1.5d | 2019-10-08 09:00 A | 2019-10-09 14:00 A |  | 100% |  |  |  | 24h | 24h |
| 4 | 1.1.1.1 | Mule ESB技术研究 |  | 1.5d | 2019-10-08 09:00 A | 2019-10-09 14:00 A |  | 100% |  |  | 罗荣熙 [50%]; 文超 | 24h | 24h |
| 5 | 1.1.2 | **后端设计** |  | 3d | 2019-10-09 14:00 A | 2019-10-12 14:00 A |  | 100% |  |  |  | 48h | 48h |
| 6 | 1.1.2.1 | Mule ESB数据转换设计 |  | 3d | 2019-10-09 14:00 A | 2019-10-12 14:00 A | 4 | 100% |  |  | 文超 | 24h | 24h |
| 7 | 1.1.2.2 | MCP标准接口详细设计 |  | 3d | 2019-10-09 14:00 A | 2019-10-12 14:00 A | 4 | 100% |  |  | 文超 | 24h | 24h |
| 8 | 1.1.3 | **后端Mule ESB开发** |  | 5d | 2019-10-12 14:00 A | 2019-10-18 14:00 A |  | 100% |  |  |  | 72h | 72h |
| 9 | 1.1.3.1 | 数据转换公共方法的封装（ERP接口数据格式转成MCP接口数据格式） |  | 4d | 2019-10-12 14:00 A | 2019-10-17 14:00 A | 6 | 100% |  |  | 文超 | 32h | 32h |
| 10 | 1.1.3.2 | 供应商商品数据转换 |  | 1d | 2019-10-17 14:00 A | 2019-10-18 14:00 A | 9 | 100% |  |  | 文超 | 8h | 8h |
| 11 | 1.1.3.3 | 采购单数据转换 |  | 1d | 2019-10-12 14:00 A | 2019-10-14 14:00 A | 6 | 100% |  |  | 杨迎 | 8h | 8h |
| 12 | 1.1.3.4 | 采购单确认数据转换 |  | 1d | 2019-10-14 14:00 A | 2019-10-15 14:00 A | 11 | 100% |  |  | 杨迎 | 8h | 8h |
| 13 | 1.1.3.5 | 供货单数据转换 |  | 1d | 2019-10-15 14:00 A | 2019-10-16 14:00 A | 12 | 100% |  |  | 杨迎 | 8h | 8h |
| 14 | 1.1.3.6 | 退货申请单数据转换 | inactive | 1d | 2019-10-08 09:00 | 2019-10-09 09:00 |  |  |  | 71d |  | 8h |  |
| 15 | 1.1.3.7 | 退货申请单确认数据转换 | inactive | 1d | 2019-10-08 09:00 | 2019-10-09 09:00 |  |  |  | 71d |  | 8h |  |
| 16 | 1.1.3.8 | 退货单数据转换 |  | 2d | 2019-10-12 14:00 A | 2019-10-15 14:00 A | 6 | 100% |  |  | 刘振兴 [50%] | 8h | 8h |
| 17 | 1.1.3.9 | 退货单确认数据转换 | inactive | 1d | 2019-10-15 14:00 | 2019-10-16 14:00 | 16 |  |  | 64.5d | 刘振兴 | 8h |  |
| 18 | 1.1.4 | **后端标准接口开发** |  | 5d | 2019-10-15 14:00 A | 2019-10-22 14:00 A |  | 100% |  |  |  | 80h | 80h |
| 19 | 1.1.4.1 | 供应商商品信息上传，商品入库（如果是骨科耗材商品，如果平台没有维护，则要同步到平台骨科耗进行管理材） |  | 2d | 2019-10-18 14:00 A | 2019-10-22 14:00 A | 10 | 100% |  |  | 文超 | 16h | 16h |
| 20 | 1.1.4.2 | 采购单下发接口 |  | 2d | 2019-10-16 14:00 A | 2019-10-18 14:00 A | 13 | 100% |  |  | 杨迎 | 16h | 16h |
| 21 | 1.1.4.3 | 采购单确认上传接口 |  | 2d | 2019-10-18 14:00 A | 2019-10-22 14:00 A | 20 | 100% |  |  | 杨迎 | 16h | 16h |
| 22 | 1.1.4.4 | 供货单上传接口（未提交到医院运行供应商进行修改） |  | 2d | 2019-10-15 14:00 A | 2019-10-17 14:00 A | 17 | 100% |  |  | 刘振兴 | 16h | 16h |
| 23 | 1.1.4.5 | 退货申请单下发接口 | inactive | 2d | 2019-10-08 09:00 | 2019-10-10 09:00 |  |  |  | 70d |  | 16h |  |
| 24 | 1.1.4.6 | 退货申请单确认上传接口 | inactive | 1d | 2019-10-08 09:00 | 2019-10-09 09:00 |  |  |  | 71d |  | 8h |  |
| 25 | 1.1.4.7 | 退货单下发接口 |  | 2d | 2019-10-17 14:00 A | 2019-10-21 14:00 A | 22 | 100% |  |  | 刘振兴 | 16h | 16h |
| 26 | 1.1.4.8 | 退货单确认上传接口 | inactive | 1d | 2019-10-21 14:00 | 2019-10-22 14:00 | 25 |  |  | 60.5d | 刘振兴 | 8h |  |
| 27 | 1.1.5 | 研发人员自测 |  | 2d | 2019-10-21 14:00 A | 2019-10-23 14:00 A | 26 | 100% |  |  | 产品研发团队 | 16h | 16h |

| ID | WBS | Task | Type | Duration | Start | Finish | Predecessors | Complete | Remaining | Total slack | Free slack | Resources | Work | Actual work |
| --- | --- | --- | --- | --- | --- | --- | --- | --- | --- | --- | --- | --- | --- | --- |
| 28 | 1.1.6 | **外部系统联调** |  | 7d | 2019-10-23 14:00 | 2019-11-01 14:00 |  |  |  | 52.5d |  |  | 40h |  |
| 29 | 1.1.6.1 | 供应商商品信息上传，商品入库（如果是骨科耗材商品，如果平台没有维护，则要同步到平台骨科耗进行管理材） |  | 2d | 2019-10-23 14:00 | 2019-10-25 14:00 | 27 |  |  | 52.5d | 0d | 刘振兴 [50%] | 8h |  |
| 30 | 1.1.6.2 | 采购单下发接口 |  | 2d | 2019-10-25 14:00 | 2019-10-29 14:00 | 29 |  |  | 52.5d | 0d | 刘振兴 [50%] | 8h |  |
| 31 | 1.1.6.3 | 采购单确认上传接口 |  | 1d | 2019-10-29 14:00 | 2019-10-30 14:00 | 30 |  |  | 52.5d | 0d | 刘振兴 | 8h |  |
| 32 | 1.1.6.4 | 供货单上传接口 |  | 1d | 2019-10-30 14:00 | 2019-10-31 14:00 | 31 |  |  | 52.5d | 0d | 刘振兴 | 8h |  |
| 33 | 1.1.6.5 | 退货申请单下发接口 | inactive | 1d | 2019-10-08 09:00 | 2019-10-09 09:00 |  |  |  | 71d |  |  | 8h |  |
| 34 | 1.1.6.6 | 退货申请单确认上传接口 | inactive | 1d | 2019-10-08 09:00 | 2019-10-09 09:00 |  |  |  | 71d |  |  | 8h |  |
| 35 | 1.1.6.7 | 退货单下发接口 |  | 1d | 2019-10-31 14:00 | 2019-11-01 14:00 | 32 |  |  | 52.5d | 0d | 刘振兴 | 8h |  |
| 36 | 1.1.6.8 | 退货单确认上传接口 | inactive | 1d | 2019-11-01 14:00 | 2019-11-04 14:00 | 35 |  |  | 51.5d |  | 刘振兴 | 8h |  |
| 37 | 1.2 | **一期功能优化** |  | 58d | 2019-10-23 14:00 A | 2020-01-14 14:00 |  | 9% | 52.81d | 1.5d |  |  | 1712h | 156h |
| 38 | 1.2.1 | **组件集成** |  | 10d | 2019-10-23 14:00 A | 2019-11-06 14:00 A |  | 100% |  |  |  |  | 40h | 40h |
| 39 | 1.2.1.1 | 工作流（Activiti）集成 |  | 2d | 2019-10-31 14:00 A | 2019-11-04 14:00 A | 432 | 100% |  |  |  | 文超 | 16h | 16h |
| 40 | 1.2.1.2 | 工作流（Activiti）审批服务方法封装 |  | 1d | 2019-11-04 14:00 A | 2019-11-05 14:00 A | 39 | 100% |  |  |  | 文超 | 8h | 8h |
| 41 | 1.2.1.3 | 工作流（Activiti）审批历史记录查询方法封装 |  | 1d | 2019-11-05 14:00 A | 2019-11-06 14:00 A | 40 | 100% |  |  |  | 文超 | 8h | 8h |
| 42 | 1.2.1.4 | ireport报表工具集成 | inactive | 2d | 2019-11-04 14:00 | 2019-11-06 14:00 | 39 |  |  | 49.5d |  | 罗荣熙 | 16h |  |
| 43 | 1.2.1.5 | ireport报表工具公共方法封装 | inactive | 2d | 2019-11-05 14:00 | 2019-11-07 14:00 | 40 |  |  | 48.5d |  | 罗荣熙 | 16h |  |
| 44 | 1.2.1.6 | Excel批量导入/导出公共方法封装 |  | 2d | 2019-10-23 14:00 A | 2019-10-25 14:00 A | 409 | 100% |  |  |  | 罗荣熙 [50%] | 8h | 8h |
| 45 | 1.2.2 | **机构管理** |  | 25d | 2019-10-25 14:00 A | 2019-11-29 14:00 |  | 24% | 18.9d | 32.5d |  |  | 452h | 116h |
| 46 | 1.2.2.1 | **厂商管理** |  | 14d | 2019-10-25 14:00 A | 2019-11-14 14:00 |  | 76% | 3.39d | 41d |  |  | 124h | 92h |
| 47 | 1.2.2.1.1 | **后端设计** |  | 7d | 2019-10-25 14:00 A | 2019-11-05 14:00 A |  | 100% |  |  |  |  | 24h | 24h |
| 48 | 1.2.2.1.1.1 | 表结构设计（现有的厂商信息表改为厂商信息待审批表，新增厂商信息表、厂商信息审批历史记录表） |  | 2d | 2019-10-25 14:00 A | 2019-10-29 14:00 A | 44 | 100% |  |  |  | 罗荣熙 [50%] | 8h | 8h |
| 49 | 1.2.2.1.1.2 | 接口详细设计 |  | 2d | 2019-11-01 14:00 A | 2019-11-05 14:00 A | 41 | 100% |  |  |  | 文超 | 16h | 16h |
| 50 | 1.2.2.1.2 | **后端开发** |  | 7d | 2019-10-31 14:00 A | 2019-11-11 14:00 |  | 88% | 0.88d | 41d |  |  | 64h | 56h |
| 51 | 1.2.2.1.2.1 | 原厂商信息管理代码改造 |  | 2d | 2019-10-31 14:00 A | 2019-11-04 14:00 A | 432 | 100% |  |  |  | 文超 | 16h | 16h |
| 52 | 1.2.2.1.2.2 | 待审批记录审批接口，审批时往审批历史记录表插入记录，审批通过时通过新增或更新厂商信息表 |  | 2d | 2019-11-05 14:00 A | 2019-11-07 14:00 A | 57 | 100% |  |  |  | 杨朝辉 | 16h | 16h |
| 53 | 1.2.2.1.2.3 | 变更信息详情接口（变更前后记录对比） |  | 1d | 2019-11-07 14:00 A | 2019-11-08 14:00 A | 52 | 100% |  |  |  | 杨朝辉 | 8h | 8h |
| 54 | 1.2.2.1.2.4 | 审批流详情接口（审批的所有过程记录） |  | 1d | 2019-11-08 14:00 | 2019-11-11 14:00 | 53 |  |  | 41d | 0d | 杨朝辉 | 8h |  |
| 55 | 1.2.2.1.2.5 | 批量导入接口 |  | 1d | 2019-11-01 14:00 A | 2019-11-04 14:00 A | 36 | 100% |  |  |  | 杨朝辉 | 8h | 8h |
| 56 | 1.2.2.1.2.6 | 批量导出接口（支持查询条件） |  | 0.5d | 2019-11-04 14:00 A | 2019-11-05 09:00 A | 55 | 100% |  |  |  | 杨朝辉 | 4h | 4h |
| 57 | 1.2.2.1.2.7 | 启用/停用接口 |  | 0.5d | 2019-11-05 09:00 A | 2019-11-05 14:00 A | 56 | 100% |  |  |  | 杨朝辉 | 4h | 4h |

| ID | WBS | Task | Duration | Start | Finish | Predecessors | Complete | Remaining | Total slack | Free slack | Resources | Work | Actual work |
| --- | --- | --- | --- | --- | --- | --- | --- | --- | --- | --- | --- | --- | --- |
| 58 | 1.2.2.1.3 | **前端开发** | 1.5d | 2019-11-01 14:00 A | 2019-11-05 09:00 A |  | 100% |  |  |  |  | 12h | 12h |
| 59 | 1.2.2.1.3.1 | 变更记录审批界面开发 | 0.5d | 2019-11-01 14:00 A | 2019-11-04 09:00 A | 36 | 100% |  |  |  | 莫世坚 | 4h | 4h |
| 60 | 1.2.2.1.3.2 | 变更信息详情界面开发 | 0.5d | 2019-11-04 09:00 A | 2019-11-04 14:00 A | 59 | 100% |  |  |  | 莫世坚 | 4h | 4h |
| 61 | 1.2.2.1.3.3 | 审批流详情界面开发 | 0.5d | 2019-11-04 14:00 A | 2019-11-05 09:00 A | 60 | 100% |  |  |  | 莫世坚 | 4h | 4h |
| 62 | 1.2.2.1.4 | **前后端联调** | 3d | 2019-11-11 14:00 | 2019-11-14 14:00 |  |  |  | 41d |  |  | 24h |  |
| 63 | 1.2.2.1.4.1 | 待审批记录审批接口，审批时往审批历史记录表插入记录，审批通过时通过新增或更新厂商信息表 | 0.5d | 2019-11-11 14:00 | 2019-11-12 09:00 | 54 |  |  | 41d | 0d | 杨朝辉 | 4h |  |
| 64 | 1.2.2.1.4.2 | 变更信息详情接口（变更前后记录对比） | 0.5d | 2019-11-12 09:00 | 2019-11-12 14:00 | 63 |  |  | 41d | 0d | 杨朝辉 | 4h |  |
| 65 | 1.2.2.1.4.3 | 审批流详情接口（审批的所有过程记录） | 0.5d | 2019-11-12 14:00 | 2019-11-13 09:00 | 64 |  |  | 41d | 0d | 杨朝辉 | 4h |  |
| 66 | 1.2.2.1.4.4 | 批量导入接口 | 0.5d | 2019-11-13 09:00 | 2019-11-13 14:00 | 65 |  |  | 41d | 0d | 杨朝辉 | 4h |  |
| 67 | 1.2.2.1.4.5 | 批量导出接口（支持查询条件） | 0.5d | 2019-11-13 14:00 | 2019-11-14 09:00 | 66 |  |  | 41d | 0d | 杨朝辉 | 4h |  |
| 68 | 1.2.2.1.4.6 | 启用/停用接口 | 0.5d | 2019-11-14 09:00 | 2019-11-14 14:00 | 67 |  |  | 41d | 0d | 杨朝辉 | 4h |  |
| 69 | 1.2.2.2 | **医院管理** | 12.5d | 2019-10-29 14:00 A | 2019-11-15 09:00 |  | 8% | 11.49d | 43d |  |  | 132h | 12h |
| 70 | 1.2.2.2.1 | **后端设计** | 9d | 2019-10-29 14:00 | 2019-11-11 14:00 |  |  |  | 20.5d |  |  | 32h |  |
| 71 | 1.2.2.2.1.1 | 表结构设计（现有的医院信息表改为医院信息待审批表，新增医院信息表和医院信息审批历史记录表） | 4d | 2019-10-29 14:00 | 2019-11-04 14:00 | 48 |  |  | 25.5d | 0d | 罗荣熙 [50%] | 16h |  |
| 72 | 1.2.2.2.1.2 | 接口详细设计 | 2d | 2019-11-07 14:00 | 2019-11-11 14:00 | 74 |  |  | 14.5d | 0d | 文超 | 16h |  |
| 73 | 1.2.2.2.2 | **后端开发** | 7d | 2019-11-05 14:00 | 2019-11-14 14:00 |  |  |  | 3d |  |  | 64h |  |
| 74 | 1.2.2.2.2.1 | 原医院信息管理代码改造 | 2d | 2019-11-05 14:00 | 2019-11-07 14:00 | 49 |  |  | 14.5d | 0d | 文超 | 16h |  |
| 75 | 1.2.2.2.2.2 | 待审批记录审批接口，审批时往审批历史记录表插入记录，审批通过时通过新增或更新医院信息表 | 2d | 2019-11-08 14:00 | 2019-11-12 14:00 | 436 |  |  | 40.5d | 0d | 杨迎 | 16h |  |
| 76 | 1.2.2.2.2.3 | 变更信息详情接口（变更前后记录对比） | 1d | 2019-11-12 14:00 | 2019-11-13 14:00 | 75 |  |  | 40.5d | 0d | 杨迎 | 8h |  |
| 77 | 1.2.2.2.2.4 | 审批流详情接口（审批的所有过程记录） | 1d | 2019-11-13 14:00 | 2019-11-14 14:00 | 76 |  |  | 43.5d |  | 杨迎 | 8h |  |
| 78 | 1.2.2.2.2.5 | 批量导入接口 | 1d | 2019-11-08 14:00 | 2019-11-11 14:00 | 436 |  |  | 0d |  | 郑海文 | 8h |  |
| 79 | 1.2.2.2.2.6 | 批量导出接口（支持查询条件） | 0.5d | 2019-11-11 14:00 | 2019-11-12 09:00 | 78 |  |  | 0d |  | 郑海文 | 4h |  |
| 80 | 1.2.2.2.2.7 | 启用/停用接口 | 0.5d | 2019-11-12 09:00 | 2019-11-12 14:00 | 79 |  |  | 0d |  | 郑海文 | 4h |  |
| 81 | 1.2.2.2.3 | **前端开发** | 1.5d | 2019-11-05 09:00 A | 2019-11-06 14:00 A |  | 100% |  |  |  |  | 12h | 12h |
| 82 | 1.2.2.2.3.1 | 变更记录审批界面开发 | 0.5d | 2019-11-05 09:00 A | 2019-11-05 14:00 A | 61 | 100% |  |  |  | 莫世坚 | 4h | 4h |
| 83 | 1.2.2.2.3.2 | 变更信息详情界面开发 | 0.5d | 2019-11-05 14:00 A | 2019-11-06 09:00 A | 82 | 100% |  |  |  | 莫世坚 | 4h | 4h |
| 84 | 1.2.2.2.3.3 | 审批流详情界面开发 | 0.5d | 2019-11-06 09:00 A | 2019-11-06 14:00 A | 83 | 100% |  |  |  | 莫世坚 | 4h | 4h |

| ID | WBS | Task | Duration | Start | Finish | Predecessors | Complete | Remaining | Total slack | Free slack | Resources | Work | Actual work |
| --- | --- | --- | --- | --- | --- | --- | --- | --- | --- | --- | --- | --- | --- |
| 85 | 1.2.2.2.4 | **前后端联调** | 2.5d | 2019-11-12 14:00 | 2019-11-15 09:00 |  |  |  | 0d |  |  | 24h |  |
| 86 | 1.2.2.2.4.1 | 待审批记录审批接口，审批时往审批历史记录表插入记录，审批通过时通过新增或更新医院信息表 | 0.5d | 2019-11-13 14:00 | 2019-11-14 09:00 | 76 |  |  | 40.5d | 0d | 杨迎 | 4h |  |
| 87 | 1.2.2.2.4.2 | 变更信息详情接口（变更前后记录对比） | 0.5d | 2019-11-14 09:00 | 2019-11-14 14:00 | 86 |  |  | 40.5d | 0d | 杨迎 | 4h |  |
| 88 | 1.2.2.2.4.3 | 审批流详情接口（审批的所有过程记录） | 0.5d | 2019-11-14 14:00 | 2019-11-15 09:00 | 87 |  |  | 40.5d | 0d | 杨迎 | 4h |  |
| 89 | 1.2.2.2.4.4 | 批量导入接口 | 0.5d | 2019-11-12 14:00 | 2019-11-13 09:00 | 80 |  |  | 0d |  | 郑海文 | 4h |  |
| 90 | 1.2.2.2.4.5 | 批量导出接口（支持查询条件） | 0.5d | 2019-11-13 09:00 | 2019-11-13 14:00 | 89 |  |  | 44.5d |  | 郑海文 | 4h |  |
| 91 | 1.2.2.2.4.6 | 启用/停用接口 | 0.5d | 2019-11-13 09:00 | 2019-11-13 14:00 | 89 |  |  | 0d |  | 郑海文 | 4h |  |
| 92 | 1.2.2.3 | **供应商管理** | 11d | 2019-11-04 14:00 A | 2019-11-19 14:00 |  | 7% | 10.2d | 40.5d |  |  | 132h | 12h |
| 93 | 1.2.2.3.1 | **后端设计** | 8d | 2019-11-04 14:00 | 2019-11-14 14:00 |  |  |  | 25.5d |  |  | 32h |  |
| 94 | 1.2.2.3.1.1 | 表结构设计（现有的供应商信息表改为供应商信息待审批表，新增供应商信息表和供应商信息审批历史记录表） | 4d | 2019-11-04 14:00 | 2019-11-08 14:00 | 71 |  |  | 25.5d | 0d | 罗荣熙 [50%] | 16h |  |
| 95 | 1.2.2.3.1.2 | 接口详细设计 | 4d | 2019-11-08 14:00 | 2019-11-14 14:00 | 94 |  |  | 25.5d | 0d | 罗荣熙 [50%] | 16h |  |
| 96 | 1.2.2.3.2 | **后端开发** | 5d | 2019-11-11 14:00 | 2019-11-18 14:00 |  |  |  | 2d |  |  | 64h |  |
| 97 | 1.2.2.3.2.1 | 原供应商信息管理代码改造 | 2d | 2019-11-11 14:00 | 2019-11-13 14:00 | 72 |  |  | 14.5d | 0d | 文超 | 16h |  |
| 98 | 1.2.2.3.2.2 | 待审批记录审批接口，审批时往审批历史记录表插入记录，审批通过时通过新增或更新供应商信息表 | 2d | 2019-11-14 14:00 | 2019-11-18 14:00 | 68 |  |  | 41d | 0d | 杨朝辉 | 16h |  |
| 99 | 1.2.2.3.2.3 | 变更信息详情接口（变更前后记录对比） | 1d | 2019-11-15 09:00 | 2019-11-18 09:00 | 88 |  |  | 40.5d | 0d | 杨迎 | 8h |  |
| 100 | 1.2.2.3.2.4 | 审批流详情接口（审批的所有过程记录） | 1d | 2019-11-13 14:00 | 2019-11-14 14:00 | 91 |  |  | 0d |  | 郑海文 | 8h |  |
| 101 | 1.2.2.3.2.5 | 批量导入接口 | 1d | 2019-11-14 14:00 | 2019-11-15 14:00 | 100 |  |  | 0d |  | 郑海文 | 8h |  |
| 102 | 1.2.2.3.2.6 | 批量导出接口（支持查询条件） | 0.5d | 2019-11-15 14:00 | 2019-11-18 09:00 | 101 |  |  | 0d |  | 郑海文 | 4h |  |
| 103 | 1.2.2.3.2.7 | 启用/停用接口 | 0.5d | 2019-11-18 09:00 | 2019-11-18 14:00 | 102 |  |  | 0d |  | 郑海文 | 4h |  |
| 104 | 1.2.2.3.3 | **前端开发** | 1.5d | 2019-11-06 14:00 A | 2019-11-08 09:00 A |  | 100% |  |  |  |  | 12h | 12h |
| 105 | 1.2.2.3.3.1 | 变更记录审批界面开发 | 0.5d | 2019-11-06 14:00 A | 2019-11-07 09:00 A | 84 | 100% |  |  |  | 莫世坚 | 4h | 4h |
| 106 | 1.2.2.3.3.2 | 变更信息详情界面开发 | 0.5d | 2019-11-07 09:00 A | 2019-11-07 14:00 A | 105 | 100% |  |  |  | 莫世坚 | 4h | 4h |
| 107 | 1.2.2.3.3.3 | 审批流详情界面开发 | 0.5d | 2019-11-07 14:00 A | 2019-11-08 09:00 A | 106 | 100% |  |  |  | 莫世坚 | 4h | 4h |
| 108 | 1.2.2.3.4 | **前后端联调** | 1.5d | 2019-11-18 09:00 | 2019-11-19 14:00 |  |  |  | 0.5d |  |  | 24h |  |
| 109 | 1.2.2.3.4.1 | 待审批记录审批接口，审批时往审批历史记录表插入记录，审批通过时通过新增或更新供应商信息表 | 0.5d | 2019-11-18 14:00 | 2019-11-19 09:00 | 98 |  |  | 41d |  | 杨朝辉 | 4h |  |
| 110 | 1.2.2.3.4.2 | 变更信息详情接口（变更前后记录对比） | 0.5d | 2019-11-18 09:00 | 2019-11-18 14:00 | 99 |  |  | 40.5d | 0d | 杨迎 | 4h |  |
| 111 | 1.2.2.3.4.3 | 审批流详情接口（审批的所有过程记录） | 0.5d | 2019-11-18 14:00 | 2019-11-19 09:00 | 110 |  |  | 40.5d | 0d | 杨迎 | 4h |  |
| 112 | 1.2.2.3.4.4 | 批量导入接口 | 0.5d | 2019-11-19 09:00 | 2019-11-19 14:00 | 111 |  |  | 40.5d |  | 杨迎 | 4h |  |
| 113 | 1.2.2.3.4.5 | 批量导出接口（支持查询条件） | 0.5d | 2019-11-18 14:00 | 2019-11-19 09:00 | 103 |  |  | 0d |  | 郑海文 | 4h |  |
| 114 | 1.2.2.3.4.6 | 启用/停用接口 | 0.5d | 2019-11-19 09:00 | 2019-11-19 14:00 | 113 |  |  | 0d |  | 郑海文 | 4h |  |
| 115 | 1.2.2.4 | 研发人员自测 | 3d | 2019-11-19 14:00 | 2019-11-22 14:00 | 114 |  |  | 0d |  | 产品研发团队 | 24h |  |

| ID | WBS | Task | Type | Duration | Start | Finish | Predecessors | Total slack | Free slack | Resources | Work |
| --- | --- | --- | --- | --- | --- | --- | --- | --- | --- | --- | --- |
| 116 | 1.2.2.5 | **测试介入** |  | 5d | 2019-11-22 14:00 | 2019-11-29 14:00 |  | 32.5d |  |  | 40h |
| 117 | 1.2.2.5.1 | 封闭测试 |  | 2d | 2019-11-22 14:00 | 2019-11-26 14:00 | 115 | 32.5d | 0d | 产品测试团队 | 16h |
| 118 | 1.2.2.5.2 | bug修复回归测试 |  | 3d | 2019-11-26 14:00 | 2019-11-29 14:00 | 117 | 32.5d |  | 产品研发 | 24h |
| 119 | 1.2.2.6 | **代理商管理** | inactive | 1d | 2019-10-08 09:00 | 2019-10-09 09:00 |  | 71d |  |  | 24h |
| 120 | 1.2.2.6.1 | **后端设计** | inactive | 0.5d | 2019-10-08 09:00 | 2019-10-08 14:00 |  | 71.5d |  |  | 4h |
| 121 | 1.2.2.6.1.1 | 接口详细设计 | inactive | 0.5d | 2019-10-08 09:00 | 2019-10-08 14:00 |  | 71.5d |  |  | 4h |
| 122 | 1.2.2.6.2 | **后端开发** | inactive | 1d | 2019-10-08 09:00 | 2019-10-09 09:00 |  | 71d |  |  | 12h |
| 123 | 1.2.2.6.2.1 | 批量导入接口 | inactive | 1d | 2019-10-08 09:00 | 2019-10-09 09:00 |  | 71d |  |  | 8h |
| 124 | 1.2.2.6.2.2 | 批量导出接口（支持查询条件） | inactive | 1d | 2019-10-08 09:00 | 2019-10-09 09:00 |  | 71d |  |  | 4h |
| 125 | 1.2.2.6.3 | **前后端联调** | inactive | 0.5d | 2019-10-08 09:00 | 2019-10-08 14:00 |  | 71.5d |  |  | 8h |
| 126 | 1.2.2.6.3.1 | 批量导入接口 | inactive | 0.5d | 2019-10-08 09:00 | 2019-10-08 14:00 |  | 71.5d |  |  | 4h |
| 127 | 1.2.2.6.3.2 | 批量导出接口（支持查询条件） | inactive | 0.5d | 2019-10-08 09:00 | 2019-10-08 14:00 |  | 71.5d |  |  | 4h |
| 128 | 1.2.3 | **商品管理** |  | 30.5d | 2019-11-13 14:00 | 2019-12-26 09:00 |  | 7d |  |  | 684h |
| 129 | 1.2.3.1 | **平台商品** |  | 19d | 2019-11-13 14:00 | 2019-12-10 14:00 |  | 7d |  |  | 432h |
| 130 | 1.2.3.1.1 | **药品管理** |  | 17.5d | 2019-11-13 14:00 | 2019-12-09 09:00 |  | 14.5d |  |  | 144h |
| 131 | 1.2.3.1.1.1 | **后端设计** |  | 8d | 2019-11-14 14:00 | 2019-11-26 14:00 |  | 25.5d |  |  | 32h |
| 132 | 1.2.3.1.1.1.1 | 表结构设计（现有的平台药品信息表改为平台药品信息待审批表，新增平台药品信息表和平台药品审批历史记录表） |  | 2d | 2019-11-14 14:00 | 2019-11-18 14:00 | 95 | 25.5d | 0d | 罗荣熙 [50%] | 8h |
| 133 | 1.2.3.1.1.1.2 | 接口详细设计 |  | 6d | 2019-11-18 14:00 | 2019-11-26 14:00 | 132 | 25.5d | 0d | 罗荣熙 [50%] | 24h |
| 134 | 1.2.3.1.1.2 | **后端开发** |  | 14.5d | 2019-11-13 14:00 | 2019-12-04 09:00 |  | 14.5d |  |  | 76h |
| 135 | 1.2.3.1.1.2.1 | 原平台药品信息管理代码改造 |  | 2d | 2019-11-13 14:00 | 2019-11-15 14:00 | 97 | 14.5d | 0d | 文超 | 16h |
| 136 | 1.2.3.1.1.2.2 | 待审批记录审批接口，审批时往审批历史记录表插入记录，审批通过时通过新增或更新平台药品信息表 |  | 2d | 2019-11-22 14:00 | 2019-11-26 14:00 | 115 | 22d | 0d | 杨迎 | 16h |
| 137 | 1.2.3.1.1.2.3 | 变更信息详情接口 |  | 1d | 2019-11-26 14:00 | 2019-11-27 14:00 | 136 | 22d | 0d | 杨迎 | 8h |
| 138 | 1.2.3.1.1.2.4 | 审批流详情接口（审批的所有过程记录） |  | 1d | 2019-11-27 14:00 | 2019-11-28 14:00 | 137 | 22d | 0d | 杨迎 | 8h |
| 139 | 1.2.3.1.1.2.5 | 药品商品信息批量导入接口 |  | 2d | 2019-11-28 14:00 | 2019-12-02 14:00 | 138 | 22d | 0d | 杨迎 | 16h |
| 140 | 1.2.3.1.1.2.6 | 药品商品信息批量导出功能（支持条件查询） |  | 1d | 2019-12-02 14:00 | 2019-12-03 14:00 | 139 | 22d | 0d | 杨迎 | 8h |
| 141 | 1.2.3.1.1.2.7 | 启用/停用接口 |  | 0.5d | 2019-12-03 14:00 | 2019-12-04 09:00 | 140 | 22d | 0d | 杨迎 | 4h |

| ID | WBS | Task | Duration | Start | Finish | Predecessors | Total slack | Free slack | Resources | Work |
| --- | --- | --- | --- | --- | --- | --- | --- | --- | --- | --- |
| 142 | 1.2.3.1.1.3 | **前端开发** | 1.5d | 2019-11-22 14:00 | 2019-11-26 09:00 |  | 33d |  |  | 12h |
| 143 | 1.2.3.1.1.3.1 | 变更记录审批界面开发 | 0.5d | 2019-11-22 14:00 | 2019-11-25 09:00 | 115 | 33d | 0d | 莫世坚 | 4h |
| 144 | 1.2.3.1.1.3.2 | 变更信息详情界面开发 | 0.5d | 2019-11-25 09:00 | 2019-11-25 14:00 | 143 | 33d | 0d | 莫世坚 | 4h |
| 145 | 1.2.3.1.1.3.3 | 审批流详情界面开发 | 0.5d | 2019-11-25 14:00 | 2019-11-26 09:00 | 144 | 33d | 0d | 莫世坚 | 4h |
| 146 | 1.2.3.1.1.4 | **前后端联调** | 3d | 2019-12-04 09:00 | 2019-12-09 09:00 |  | 22d |  |  | 24h |
| 147 | 1.2.3.1.1.4.1 | 待审批记录审批接口，审批时往审批历史记录表插入记录，审批通过时通过新增或更新平台药品信息表 | 0.5d | 2019-12-04 09:00 | 2019-12-04 14:00 | 141 | 22d | 0d | 杨迎 | 4h |
| 148 | 1.2.3.1.1.4.2 | 变更信息详情接口 | 0.5d | 2019-12-04 14:00 | 2019-12-05 09:00 | 147 | 22d | 0d | 杨迎 | 4h |
| 149 | 1.2.3.1.1.4.3 | 审批流详情接口（审批的所有过程记录） | 0.5d | 2019-12-05 09:00 | 2019-12-05 14:00 | 148 | 22d | 0d | 杨迎 | 4h |
| 150 | 1.2.3.1.1.4.4 | 药品商品信息批量导入接口 | 0.5d | 2019-12-05 14:00 | 2019-12-06 09:00 | 149 | 22d | 0d | 杨迎 | 4h |
| 151 | 1.2.3.1.1.4.5 | 药品商品信息批量导出功能（支持条件查询） | 0.5d | 2019-12-06 09:00 | 2019-12-06 14:00 | 150 | 22d | 0d | 杨迎 | 4h |
| 152 | 1.2.3.1.1.4.6 | 启用/停用接口 | 0.5d | 2019-12-06 14:00 | 2019-12-09 09:00 | 151 | 22d | 0d | 杨迎 | 4h |
| 153 | 1.2.3.1.2 | **试剂管理** | 15.5d | 2019-11-15 14:00 | 2019-12-09 09:00 |  | 14.5d |  |  | 144h |
| 154 | 1.2.3.1.2.1 | **后端设计** | 8d | 2019-11-26 14:00 | 2019-12-06 14:00 |  | 25.5d |  |  | 32h |
| 155 | 1.2.3.1.2.1.1 | 表结构设计（现有的平台试剂信息表改为平台试剂信息待审批表，新增平台试剂信息表和平台试剂审批历史记录表） | 2d | 2019-11-26 14:00 | 2019-11-28 14:00 | 133 | 25.5d | 0d | 罗荣熙 [50%] | 8h |
| 156 | 1.2.3.1.2.1.2 | 接口详细设计 | 6d | 2019-11-28 14:00 | 2019-12-06 14:00 | 155 | 25.5d | 0d | 罗荣熙 [50%] | 24h |
| 157 | 1.2.3.1.2.2 | **后端开发** | 12.5d | 2019-11-15 14:00 | 2019-12-04 09:00 |  | 14.5d |  |  | 76h |
| 158 | 1.2.3.1.2.2.1 | 原平台试剂信息管理代码改造 | 2d | 2019-11-15 14:00 | 2019-11-19 14:00 | 135 | 14.5d | 0d | 文超 | 16h |
| 159 | 1.2.3.1.2.2.2 | 待审批记录审批接口，审批时往审批历史记录表插入记录，审批通过时通过新增或更新平台试剂信息表 | 2d | 2019-11-22 14:00 | 2019-11-26 14:00 | 115 | 22d | 0d | 郑海文 | 16h |
| 160 | 1.2.3.1.2.2.3 | 变更信息详情接口 | 1d | 2019-11-26 14:00 | 2019-11-27 14:00 | 159 | 22d | 0d | 郑海文 | 8h |
| 161 | 1.2.3.1.2.2.4 | 审批流详情接口（审批的所有过程记录） | 1d | 2019-11-27 14:00 | 2019-11-28 14:00 | 160 | 22d | 0d | 郑海文 | 8h |
| 162 | 1.2.3.1.2.2.5 | 试剂商品信息批量导入接口 | 2d | 2019-11-28 14:00 | 2019-12-02 14:00 | 161 | 22d | 0d | 郑海文 | 16h |
| 163 | 1.2.3.1.2.2.6 | 试剂商品信息批量导出功能（支持条件查询） | 1d | 2019-12-02 14:00 | 2019-12-03 14:00 | 162 | 22d | 0d | 郑海文 | 8h |
| 164 | 1.2.3.1.2.2.7 | 启用/停用接口 | 0.5d | 2019-12-03 14:00 | 2019-12-04 09:00 | 163 | 22d | 0d | 郑海文 | 4h |
| 165 | 1.2.3.1.2.3 | **前端开发** | 1.5d | 2019-11-26 09:00 | 2019-11-27 14:00 |  | 33d |  |  | 12h |
| 166 | 1.2.3.1.2.3.1 | 变更记录审批界面开发 | 0.5d | 2019-11-26 09:00 | 2019-11-26 14:00 | 145 | 33d | 0d | 莫世坚 | 4h |
| 167 | 1.2.3.1.2.3.2 | 变更信息详情界面开发 | 0.5d | 2019-11-26 14:00 | 2019-11-27 09:00 | 166 | 33d | 0d | 莫世坚 | 4h |
| 168 | 1.2.3.1.2.3.3 | 审批流详情界面开发 | 0.5d | 2019-11-27 09:00 | 2019-11-27 14:00 | 167 | 33d | 0d | 莫世坚 | 4h |

| ID | WBS | Task | Duration | Start | Finish | Predecessors | Total slack | Free slack | Resources | Work |
| --- | --- | --- | --- | --- | --- | --- | --- | --- | --- | --- |
| 169 | 1.2.3.1.2.4 | **前后端联调** | 3d | 2019-12-04 09:00 | 2019-12-09 09:00 |  | 22d |  |  | 24h |
| 170 | 1.2.3.1.2.4.1 | 待审批记录审批接口，审批时往审批历史记录表插入记录，审批通过时通过新增或更新平台试剂信息表 | 0.5d | 2019-12-04 09:00 | 2019-12-04 14:00 | 164 | 22d | 0d | 郑海文 | 4h |
| 171 | 1.2.3.1.2.4.2 | 变更信息详情接口 | 0.5d | 2019-12-04 14:00 | 2019-12-05 09:00 | 170 | 22d | 0d | 郑海文 | 4h |
| 172 | 1.2.3.1.2.4.3 | 审批流详情接口（审批的所有过程记录） | 0.5d | 2019-12-05 09:00 | 2019-12-05 14:00 | 171 | 22d | 0d | 郑海文 | 4h |
| 173 | 1.2.3.1.2.4.4 | 试剂商品信息批量导入接口 | 0.5d | 2019-12-05 14:00 | 2019-12-06 09:00 | 172 | 22d | 0d | 郑海文 | 4h |
| 174 | 1.2.3.1.2.4.5 | 试剂商品信息批量导出功能（支持条件查询） | 0.5d | 2019-12-06 09:00 | 2019-12-06 14:00 | 173 | 22d | 0d | 郑海文 | 4h |
| 175 | 1.2.3.1.2.4.6 | 启用/停用接口 | 0.5d | 2019-12-06 14:00 | 2019-12-09 09:00 | 174 | 22d | 0d | 郑海文 | 4h |
| 176 | 1.2.3.1.3 | **耗材管理** | 15d | 2019-11-19 14:00 | 2019-12-10 14:00 |  | 3d |  |  | 144h |
| 177 | 1.2.3.1.3.1 | **后端设计** | 13d | 2019-11-21 14:00 | 2019-12-10 14:00 |  | 25.5d |  |  | 32h |
| 178 | 1.2.3.1.3.1.1 | 表结构设计（现有的平台耗材信息表改为平台耗材信息待审批表，新增平台耗材信息表和平台耗材审批历史记录表） | 2d | 2019-12-06 14:00 | 2019-12-10 14:00 | 156 | 25.5d |  | 罗荣熙 [50%] | 8h |
| 179 | 1.2.3.1.3.1.2 | 接口详细设计 | 3d | 2019-11-21 14:00 | 2019-11-26 14:00 | 181 | 35.5d |  | 文超 | 24h |
| 180 | 1.2.3.1.3.2 | **后端开发** | 10.5d | 2019-11-19 14:00 | 2019-12-04 09:00 |  | 3d |  |  | 76h |
| 181 | 1.2.3.1.3.2.1 | 原平台耗材信息管理代码改造 | 2d | 2019-11-19 14:00 | 2019-11-21 14:00 | 158 | 14.5d | 0d | 文超 | 16h |
| 182 | 1.2.3.1.3.2.2 | 待审批记录审批接口，审批时往审批历史记录表插入记录，审批通过时通过新增或更新平台试剂信息表 | 2d | 2019-11-22 14:00 | 2019-11-26 14:00 | 115 | 0d |  | 杨朝辉 | 16h |
| 183 | 1.2.3.1.3.2.3 | 变更信息详情接口 | 1d | 2019-11-26 14:00 | 2019-11-27 14:00 | 182 | 0d |  | 杨朝辉 | 8h |
| 184 | 1.2.3.1.3.2.4 | 审批流详情接口（审批的所有过程记录） | 1d | 2019-11-27 14:00 | 2019-11-28 14:00 | 183 | 0d |  | 杨朝辉 | 8h |
| 185 | 1.2.3.1.3.2.5 | 耗材商品信息批量导入接口 | 2d | 2019-11-28 14:00 | 2019-12-02 14:00 | 184 | 0d |  | 杨朝辉 | 16h |
| 186 | 1.2.3.1.3.2.6 | 耗材商品信息批量导出功能（支持条件查询） | 1d | 2019-12-02 14:00 | 2019-12-03 14:00 | 185 | 0d |  | 杨朝辉 | 8h |
| 187 | 1.2.3.1.3.2.7 | 启用/停用接口 | 0.5d | 2019-12-03 14:00 | 2019-12-04 09:00 | 186 | 0d |  | 杨朝辉 | 4h |
| 188 | 1.2.3.1.3.3 | **前端开发** | 1.5d | 2019-11-27 14:00 | 2019-11-29 09:00 |  | 33d |  |  | 12h |
| 189 | 1.2.3.1.3.3.1 | 变更记录审批界面开发 | 0.5d | 2019-11-27 14:00 | 2019-11-28 09:00 | 168 | 33d | 0d | 莫世坚 | 4h |
| 190 | 1.2.3.1.3.3.2 | 变更信息详情界面开发 | 0.5d | 2019-11-28 09:00 | 2019-11-28 14:00 | 189 | 33d | 0d | 莫世坚 | 4h |
| 191 | 1.2.3.1.3.3.3 | 审批流详情界面开发 | 0.5d | 2019-11-28 14:00 | 2019-11-29 09:00 | 190 | 33d |  | 莫世坚 | 4h |
| 192 | 1.2.3.1.3.4 | **前后端联调** | 3d | 2019-12-04 09:00 | 2019-12-09 09:00 |  | 0d |  |  | 24h |
| 193 | 1.2.3.1.3.4.1 | 待审批记录审批接口，审批时往审批历史记录表插入记录，审批通过时通过新增或更新平台试剂信息表 | 0.5d | 2019-12-04 09:00 | 2019-12-04 14:00 | 187 | 0d |  | 杨朝辉 | 4h |
| 194 | 1.2.3.1.3.4.2 | 变更信息详情接口 | 0.5d | 2019-12-04 14:00 | 2019-12-05 09:00 | 193 | 0d |  | 杨朝辉 | 4h |
| 195 | 1.2.3.1.3.4.3 | 审批流详情接口（审批的所有过程记录） | 0.5d | 2019-12-05 09:00 | 2019-12-05 14:00 | 194 | 0d |  | 杨朝辉 | 4h |
| 196 | 1.2.3.1.3.4.4 | 耗材商品信息批量导入接口 | 0.5d | 2019-12-05 14:00 | 2019-12-06 09:00 | 195 | 0d |  | 杨朝辉 | 4h |
| 197 | 1.2.3.1.3.4.5 | 耗材商品信息批量导出功能（支持条件查询） | 0.5d | 2019-12-06 09:00 | 2019-12-06 14:00 | 196 | 0d |  | 杨朝辉 | 4h |
| 198 | 1.2.3.1.3.4.6 | 启用/停用接口 | 0.5d | 2019-12-06 14:00 | 2019-12-09 09:00 | 197 | 0d |  | 杨朝辉 | 4h |

| ID | WBS | Task | Duration | Start | Finish | Predecessors | Total slack | Free slack | Resources | Work |
| --- | --- | --- | --- | --- | --- | --- | --- | --- | --- | --- |
| 199 | 1.2.3.2 | **供应商商品** | 16.5d | 2019-11-21 14:00 | 2019-12-16 09:00 |  | 11.5d |  |  | 188h |
| 200 | 1.2.3.2.1 | **药品管理** | 16.5d | 2019-11-21 14:00 | 2019-12-16 09:00 |  | 14.5d |  |  | 56h |
| 201 | 1.2.3.2.1.1 | **后端设计** | 2d | 2019-11-21 14:00 | 2019-11-25 14:00 |  | 14.5d |  |  | 16h |
| 202 | 1.2.3.2.1.1.1 | 表结构设计调整（供应商药品信息主表添加“阳光采购平台编码”字段） | 1d | 2019-11-21 14:00 | 2019-11-22 14:00 | 181 | 14.5d | 0d | 文超 | 8h |
| 203 | 1.2.3.2.1.1.2 | 接口详细设计 | 1d | 2019-11-22 14:00 | 2019-11-25 14:00 | 202 | 14.5d | 0d | 文超 | 8h |
| 204 | 1.2.3.2.1.2 | **后端开发** | 4d | 2019-12-09 09:00 | 2019-12-13 09:00 |  | 22d |  |  | 32h |
| 205 | 1.2.3.2.1.2.1 | “商品属性”字段改为非必填 | 0.5d | 2019-12-09 09:00 | 2019-12-09 14:00 | 152 | 22d | 0d | 杨迎 | 4h |
| 206 | 1.2.3.2.1.2.2 | 商品名称允许重复，批准文号/注册证号不允许重复 | 0.5d | 2019-12-09 14:00 | 2019-12-10 09:00 | 205 | 22d | 0d | 杨迎 | 4h |
| 207 | 1.2.3.2.1.2.3 | 药品信息批量导入接口 | 2d | 2019-12-10 09:00 | 2019-12-12 09:00 | 206 | 22d | 0d | 杨迎 | 16h |
| 208 | 1.2.3.2.1.2.4 | 药品信息批量导出接口（支持条件查询） | 1d | 2019-12-12 09:00 | 2019-12-13 09:00 | 207 | 22d | 0d | 杨迎 | 8h |
| 209 | 1.2.3.2.1.3 | **前后端联调** | 1d | 2019-12-13 09:00 | 2019-12-16 09:00 |  | 22d |  |  | 8h |
| 210 | 1.2.3.2.1.3.1 | 药品信息批量导入接口 | 0.5d | 2019-12-13 09:00 | 2019-12-13 14:00 | 208 | 22d | 0d | 杨迎 | 4h |
| 211 | 1.2.3.2.1.3.2 | 药品信息批量导出接口（支持条件查询） | 0.5d | 2019-12-13 14:00 | 2019-12-16 09:00 | 210 | 22d |  | 杨迎 | 4h |
| 212 | 1.2.3.2.2 | **试剂管理** | 14.5d | 2019-11-25 14:00 | 2019-12-16 09:00 |  | 14.5d |  |  | 60h |
| 213 | 1.2.3.2.2.1 | **后端设计** | 2d | 2019-11-25 14:00 | 2019-11-27 14:00 |  | 14.5d |  |  | 16h |
| 214 | 1.2.3.2.2.1.1 | 表结构设计调整（供应商药品信息主表添加“阳光采购平台编码”字段） | 1d | 2019-11-25 14:00 | 2019-11-26 14:00 | 203 | 14.5d | 0d | 文超 | 8h |
| 215 | 1.2.3.2.2.1.2 | 接口详细设计 | 1d | 2019-11-26 14:00 | 2019-11-27 14:00 | 214 | 14.5d | 0d | 文超 | 8h |
| 216 | 1.2.3.2.2.2 | **后端开发** | 4d | 2019-12-09 09:00 | 2019-12-13 09:00 |  | 22d |  |  | 32h |
| 217 | 1.2.3.2.2.2.1 | “商品属性”字段改为非必填 | 0.5d | 2019-12-09 09:00 | 2019-12-09 14:00 | 175 | 22d | 0d | 郑海文 | 4h |
| 218 | 1.2.3.2.2.2.2 | 商品名称允许重复，批准文号/注册证号不允许重复 | 0.5d | 2019-12-09 14:00 | 2019-12-10 09:00 | 217 | 22d | 0d | 郑海文 | 4h |
| 219 | 1.2.3.2.2.2.3 | 试剂信息批量导入接口 | 2d | 2019-12-10 09:00 | 2019-12-12 09:00 | 218 | 22d | 0d | 郑海文 | 16h |
| 220 | 1.2.3.2.2.2.4 | 试剂信息批量导出接口（支持条件查询） | 1d | 2019-12-12 09:00 | 2019-12-13 09:00 | 219 | 22d | 0d | 郑海文 | 8h |
| 221 | 1.2.3.2.2.3 | **前后端联调** | 1d | 2019-12-13 09:00 | 2019-12-16 09:00 |  | 22d |  |  | 12h |
| 222 | 1.2.3.2.2.3.1 | “药品本位码”字段改为“全球唯一码” | 0.5d | 2019-12-13 09:00 | 2019-12-13 14:00 | 220 | 22d | 0d | 郑海文 | 4h |
| 223 | 1.2.3.2.2.3.2 | 试剂信息批量导入接口 | 0.5d | 2019-12-13 14:00 | 2019-12-16 09:00 | 222 | 22d |  | 郑海文 | 4h |
| 224 | 1.2.3.2.2.3.3 | 试剂信息批量导出接口（支持条件查询） | 0.5d | 2019-12-13 14:00 | 2019-12-16 09:00 | 222 | 22d |  | 郑海文 | 4h |

| ID | WBS | Task | Duration | Start | Finish | Predecessors | Total slack | Free slack | Resources | Work |
| --- | --- | --- | --- | --- | --- | --- | --- | --- | --- | --- |
| 225 | 1.2.3.2.3 | **耗材管理** | 12.5d | 2019-11-27 14:00 | 2019-12-16 09:00 |  | 7.5d |  |  | 56h |
| 226 | 1.2.3.2.3.1 | **后端设计** | 2d | 2019-11-27 14:00 | 2019-11-29 14:00 |  | 14.5d |  |  | 16h |
| 227 | 1.2.3.2.3.1.1 | 表结构设计调整（供应商药品信息主表添加“阳光采购平台编码”字段） | 1d | 2019-11-27 14:00 | 2019-11-28 14:00 | 215 | 14.5d | 0d | 文超 | 8h |
| 228 | 1.2.3.2.3.1.2 | 接口详细设计 | 1d | 2019-11-28 14:00 | 2019-11-29 14:00 | 227 | 20.5d | 0d | 文超 | 8h |
| 229 | 1.2.3.2.3.2 | **后端开发** | 4d | 2019-12-09 09:00 | 2019-12-13 09:00 |  | 0d |  |  | 32h |
| 230 | 1.2.3.2.3.2.1 | “商品属性”字段改为非必填 | 0.5d | 2019-12-09 09:00 | 2019-12-09 14:00 | 198 | 0d |  | 杨朝辉 | 4h |
| 231 | 1.2.3.2.3.2.2 | 商品名称允许重复，批准文号/注册证号不允许重复 | 0.5d | 2019-12-09 14:00 | 2019-12-10 09:00 | 230 | 0d |  | 杨朝辉 | 4h |
| 232 | 1.2.3.2.3.2.3 | 耗材信息批量导入接口 | 2d | 2019-12-10 09:00 | 2019-12-12 09:00 | 231 | 0d |  | 杨朝辉 | 16h |
| 233 | 1.2.3.2.3.2.4 | 耗材信息批量导出接口（支持条件查询） | 1d | 2019-12-12 09:00 | 2019-12-13 09:00 | 232 | 0d |  | 杨朝辉 | 8h |
| 234 | 1.2.3.2.3.3 | **前后端联调** | 1d | 2019-12-13 09:00 | 2019-12-16 09:00 |  | 0d |  |  | 8h |
| 235 | 1.2.3.2.3.3.1 | 耗材信息批量导入接口 | 0.5d | 2019-12-13 09:00 | 2019-12-13 14:00 | 233 | 0d |  | 杨朝辉 | 4h |
| 236 | 1.2.3.2.3.3.2 | 耗材信息批量导出接口（支持条件查询） | 0.5d | 2019-12-13 14:00 | 2019-12-16 09:00 | 235 | 0d |  | 杨朝辉 | 4h |
| 237 | 1.2.3.2.4 | **供应目录下发** | 2d | 2019-11-29 14:00 | 2019-12-03 14:00 |  | 20.5d |  |  | 16h |
| 238 | 1.2.3.2.4.1 | **后端开发** | 1d | 2019-11-29 14:00 | 2019-12-02 14:00 |  | 20.5d |  |  | 8h |
| 239 | 1.2.3.2.4.1.1 | 供应商商品目录下发转换任务（从MCP业务表到临时表），增加“阳光采购平台编码”字段下发 | 1d | 2019-11-29 14:00 | 2019-12-02 14:00 | 228 | 20.5d | 0d | 文超 | 8h |
| 240 | 1.2.3.2.4.2 | **外部系统联调** | 1d | 2019-12-02 14:00 | 2019-12-03 14:00 |  | 20.5d |  |  | 8h |
| 241 | 1.2.3.2.4.2.1 | 供应商商品目录下发（ETL数据同步，从MCP临时表到DSC） | 1d | 2019-12-02 14:00 | 2019-12-03 14:00 | 239 | 20.5d | 0d | 文超 | 8h |
| 242 | 1.2.3.3 | 研发人员自测 | 3d | 2019-12-16 09:00 | 2019-12-19 09:00 | 236 | 0d |  | 产品研发团队 | 24h |
| 243 | 1.2.3.4 | **测试介入** | 5d | 2019-12-19 09:00 | 2019-12-26 09:00 |  | 14d |  |  | 40h |
| 244 | 1.2.3.4.1 | 封闭测试 | 2d | 2019-12-19 09:00 | 2019-12-23 09:00 | 242 | 14d | 0d | 产品测试团队 | 16h |
| 245 | 1.2.3.4.2 | bug修复回归测试 | 3d | 2019-12-23 09:00 | 2019-12-26 09:00 | 244 | 14d |  | 产品研发 | 24h |
| 246 | 1.2.4 | **统一编码** | 27d | 2019-11-28 14:00 | 2020-01-07 14:00 |  | 6.5d |  |  | 348h |
| 247 | 1.2.4.1 | **供应商商品匹对管理** | 20.5d | 2019-11-28 14:00 | 2019-12-27 09:00 |  | 13d |  |  | 144h |
| 248 | 1.2.4.1.1 | **后端设计** | 5d | 2019-11-28 14:00 | 2019-12-05 14:00 |  | 14.5d |  |  | 24h |
| 249 | 1.2.4.1.1.1 | 表结构设计（原有的商品匹对表改为商品匹对待审批表，新增商品匹对表和商品匹对历史记录表） | 2d | 2019-11-28 14:00 | 2019-12-02 14:00 | 227 | 14.5d | 0d | 罗荣熙 [50%] | 8h |
| 250 | 1.2.4.1.1.2 | 接口详细设计 | 2d | 2019-12-03 14:00 | 2019-12-05 14:00 | 241 | 20.5d | 0d | 文超 | 16h |

| ID | WBS | Task | Duration | Start | Finish | Predecessors | Total slack | Free slack | Resources | Work |
| --- | --- | --- | --- | --- | --- | --- | --- | --- | --- | --- |
| 251 | 1.2.4.1.2 | **后端开发** | 14.5d | 2019-12-05 14:00 | 2019-12-26 09:00 |  | 13d |  |  | 88h |
| 252 | 1.2.4.1.2.1 | 原供应商商品匹对管理代码改造 | 2d | 2019-12-05 14:00 | 2019-12-09 14:00 | 250 | 20.5d | 0d | 文超 | 16h |
| 253 | 1.2.4.1.2.2 | 待审批记录审批接口，审批时往审批历史记录表插入记录，审批通过时通过新增或更新商品匹对信息表 | 2d | 2019-12-19 09:00 | 2019-12-23 09:00 | 242 | 13.5d | 0d | 杨迎 | 16h |
| 254 | 1.2.4.1.2.3 | 变更信息详情接口 | 1d | 2019-12-23 09:00 | 2019-12-24 09:00 | 253 | 13.5d | 0d | 杨迎 | 8h |
| 255 | 1.2.4.1.2.4 | 审批流详情接口（审批的所有过程记录） | 1d | 2019-12-24 09:00 | 2019-12-25 09:00 | 254 | 13.5d | 0d | 杨迎 | 8h |
| 256 | 1.2.4.1.2.5 | 匹对任务改造：处于“未匹对”状态的记录要可以自动重复匹对（例如先有供应商商品，后面才补充平台商品的，可以重新自动匹对，不需要生成新的匹对记录，只需要变更匹对状态） | 2d | 2019-12-19 09:00 | 2019-12-23 09:00 | 242 | 13d | 0d | 杨朝辉 | 16h |
| 257 | 1.2.4.1.2.6 | 手动匹对接口改造：已匹对但是审批不通过的记录可重新进行手动匹对，审批不通过后，操作栏显示“匹对”操作链接。重新匹对后，审批状态恢复为“待审批”状态，并可重新审批 | 1d | 2019-12-23 09:00 | 2019-12-24 09:00 | 256 | 13d | 0d | 杨朝辉 | 8h |
| 258 | 1.2.4.1.2.7 | 新增取消匹对接口：具有取消匹对权限的用户可取消商品的匹对记录，取消后该记录恢复“未匹对”状态并可重新匹对 | 2d | 2019-12-24 09:00 | 2019-12-26 09:00 | 257 | 13d | 0d | 杨朝辉 | 16h |
| 259 | 1.2.4.1.3 | **前端开发** | 1.5d | 2019-12-03 14:00 | 2019-12-05 09:00 |  | 27.5d |  |  | 12h |
| 260 | 1.2.4.1.3.1 | 变更记录审批界面开发 | 0.5d | 2019-12-03 14:00 | 2019-12-04 09:00 | 241 | 27.5d | 0d | 莫世坚 | 4h |
| 261 | 1.2.4.1.3.2 | 变更信息详情界面开发 | 0.5d | 2019-12-04 09:00 | 2019-12-04 14:00 | 260 | 27.5d | 0d | 莫世坚 | 4h |
| 262 | 1.2.4.1.3.3 | 审批流详情界面开发 | 0.5d | 2019-12-04 14:00 | 2019-12-05 09:00 | 261 | 27.5d | 0d | 莫世坚 | 4h |
| 263 | 1.2.4.1.4 | **前后端联调** | 2d | 2019-12-25 09:00 | 2019-12-27 09:00 |  | 13d |  |  | 20h |
| 264 | 1.2.4.1.4.1 | 待审批记录审批接口，审批时往审批历史记录表插入记录，审批通过时通过新增或更新商品匹对信息表 | 0.5d | 2019-12-25 09:00 | 2019-12-25 14:00 | 255 | 13.5d | 0d | 杨迎 | 4h |
| 265 | 1.2.4.1.4.2 | 变更信息详情接口（变更前后记录对比） | 0.5d | 2019-12-25 14:00 | 2019-12-26 09:00 | 264 | 13.5d | 0d | 杨迎 | 4h |
| 266 | 1.2.4.1.4.3 | 审批流详情接口（审批的所有过程记录） | 0.5d | 2019-12-26 09:00 | 2019-12-26 14:00 | 265 | 13.5d |  | 杨迎 | 4h |
| 267 | 1.2.4.1.4.4 | 手动匹对接口改造：已匹对但是审批不通过的记录可重新进行手动匹对，审批不通过后，操作栏显示“匹对”操作链接。重新匹对后，审批状态恢复为“待审批”状态，并可重新审批 | 0.5d | 2019-12-26 09:00 | 2019-12-26 14:00 | 258 | 13d | 0d | 杨朝辉 | 4h |
| 268 | 1.2.4.1.4.5 | 新增取消匹对接口：具有取消匹对权限的用户可取消商品的匹对记录，取消后该记录恢复“未匹对”状态并可重新匹对 | 0.5d | 2019-12-26 14:00 | 2019-12-27 09:00 | 267 | 13d |  | 杨朝辉 | 4h |
| 269 | 1.2.4.2 | **医院商品匹对管理** | 19d | 2019-12-02 14:00 | 2019-12-27 14:00 |  | 12.5d |  |  | 156h |
| 270 | 1.2.4.2.1 | **后端设计** | 8d | 2019-12-02 14:00 | 2019-12-12 14:00 |  | 14.5d |  |  | 32h |
| 271 | 1.2.4.2.1.1 | 接口详细设计 | 8d | 2019-12-02 14:00 | 2019-12-12 14:00 | 249 | 14.5d | 0d | 罗荣熙 [50%] | 32h |
| 272 | 1.2.4.2.2 | **后端开发** | 12.5d | 2019-12-09 14:00 | 2019-12-26 09:00 |  | 7.5d |  |  | 88h |
| 273 | 1.2.4.2.2.1 | 原医院商品匹对管理代码改造 | 2d | 2019-12-09 14:00 | 2019-12-11 14:00 | 252 | 20.5d | 0d | 文超 | 16h |
| 274 | 1.2.4.2.2.2 | 待审批记录审批接口，审批时往审批历史记录表插入记录，审批通过时通过新增或更新商品匹对信息表 | 2d | 2019-12-19 09:00 | 2019-12-23 09:00 | 242 | 0d |  | 郑海文 | 16h |
| 275 | 1.2.4.2.2.3 | 变更信息详情接口 | 1d | 2019-12-23 09:00 | 2019-12-24 09:00 | 274 | 0d |  | 郑海文 | 8h |
| 276 | 1.2.4.2.2.4 | 审批流详情接口（审批的所有过程记录） | 1d | 2019-12-24 09:00 | 2019-12-25 09:00 | 275 | 0d |  | 郑海文 | 8h |
| 277 | 1.2.4.2.2.5 | 匹对任务改造：处于“未匹对”状态的记录要可以自动重复匹对（例如先有供应商商品，后面才补充平台商品的，可以重新自动匹对，不需要生成新的匹对记录，只需要变更匹对状态） | 2d | 2019-12-11 14:00 | 2019-12-13 14:00 | 273 | 20.5d | 0d | 文超 | 16h |
| 278 | 1.2.4.2.2.6 | 手动匹对接口改造：已匹对但是审批不通过的记录可重新进行手动匹对，审批不通过后，操作栏显示“匹对”操作链接。重新匹对后，审批状态恢复为“待审批”状态，并可重新审批 | 1d | 2019-12-25 09:00 | 2019-12-26 09:00 | 276 | 0d |  | 郑海文 | 8h |
| 279 | 1.2.4.2.2.7 | 新增取消匹对接口：具有取消匹对权限的用户可取消商品的匹对记录，取消后该记录恢复“未匹对”状态并可重新匹对 | 2d | 2019-12-13 14:00 | 2019-12-17 14:00 | 277 | 20.5d |  | 文超 | 16h |

| ID | WBS | Task | Duration | Start | Finish | Predecessors | Total slack | Free slack | Resources | Work |
| --- | --- | --- | --- | --- | --- | --- | --- | --- | --- | --- |
| 280 | 1.2.4.2.3 | **前端开发** | 1.5d | 2019-12-05 09:00 | 2019-12-06 14:00 |  | 27.5d |  |  | 12h |
| 281 | 1.2.4.2.3.1 | 变更记录审批界面开发 | 0.5d | 2019-12-05 09:00 | 2019-12-05 14:00 | 262 | 27.5d | 0d | 莫世坚 | 4h |
| 282 | 1.2.4.2.3.2 | 变更信息详情界面开发 | 0.5d | 2019-12-05 14:00 | 2019-12-06 09:00 | 281 | 27.5d | 0d | 莫世坚 | 4h |
| 283 | 1.2.4.2.3.3 | 审批流详情界面开发 | 0.5d | 2019-12-06 09:00 | 2019-12-06 14:00 | 282 | 27.5d |  | 莫世坚 | 4h |
| 284 | 1.2.4.2.4 | **前后端联调** | 1.5d | 2019-12-26 09:00 | 2019-12-27 14:00 |  | 0d |  |  | 24h |
| 285 | 1.2.4.2.4.1 | 待审批记录审批接口，审批时往审批历史记录表插入记录，审批通过时通过新增或更新商品匹对信息表 | 0.5d | 2019-12-26 09:00 | 2019-12-26 14:00 | 278 | 12.5d | 0d | 郑海文 | 4h |
| 286 | 1.2.4.2.4.2 | 变更信息详情接口（变更前后记录对比） | 0.5d | 2019-12-26 14:00 | 2019-12-27 09:00 | 285 | 12.5d | 0d | 郑海文 | 4h |
| 287 | 1.2.4.2.4.3 | 审批流详情接口（审批的所有过程记录） | 0.5d | 2019-12-27 09:00 | 2019-12-27 14:00 | 286 | 12.5d |  | 郑海文 | 4h |
| 288 | 1.2.4.2.4.4 | 手动匹对接口改造：已匹对但是审批不通过的记录可重新进行手动匹对，审批不通过后，操作栏显示“匹对”操作链接。重新匹对后，审批状态恢复为“待审批”状态，并可重新审批 | 1d | 2019-12-26 09:00 | 2019-12-27 09:00 | 278 | 0d |  | 文超 | 8h |
| 289 | 1.2.4.2.4.5 | 新增取消匹对接口：具有取消匹对权限的用户可取消商品的匹对记录，取消后该记录恢复“未匹对”状态并可重新匹对 | 0.5d | 2019-12-27 09:00 | 2019-12-27 14:00 | 288 | 0d |  | 文超 | 4h |
| 290 | 1.2.4.3 | 研发人员自测 | 2d | 2019-12-27 14:00 | 2019-12-31 14:00 | 289 | 1.5d | 0d | 产品研发团队 | 16h |
| 291 | 1.2.4.4 | **测试介入** | 4d | 2019-12-31 14:00 | 2020-01-07 14:00 |  | 6.5d |  |  | 32h |
| 292 | 1.2.4.4.1 | 封闭测试 | 2d | 2019-12-31 14:00 | 2020-01-03 14:00 | 290 | 6.5d | 0d | 产品测试团队 | 16h |
| 293 | 1.2.4.4.2 | bug修复回归测试 | 2d | 2020-01-03 14:00 | 2020-01-07 14:00 | 292 | 6.5d |  | 产品研发 | 16h |
| 294 | 1.2.5 | **采购供货** | 22d | 2019-12-12 14:00 | 2020-01-14 14:00 |  | 1.5d |  |  | 188h |
| 295 | 1.2.5.1 | **采购单管理** | 15.5d | 2019-12-12 14:00 | 2020-01-06 09:00 |  | 6.5d |  |  | 24h |
| 296 | 1.2.5.1.1 | **后端设计** | 1d | 2019-12-12 14:00 | 2019-12-13 14:00 |  | 14.5d |  |  | 4h |
| 297 | 1.2.5.1.1.1 | 接口详细设计 | 1d | 2019-12-12 14:00 | 2019-12-13 14:00 | 271 | 14.5d | 0d | 罗荣熙 [50%] | 4h |
| 298 | 1.2.5.1.2 | **后端开发** | 2d | 2019-12-31 14:00 | 2020-01-03 14:00 |  | 6.5d |  |  | 16h |
| 299 | 1.2.5.1.2.1 | 采购单批量导入接口 | 2d | 2019-12-31 14:00 | 2020-01-03 14:00 | 290 | 6.5d | 0d | 杨迎 | 16h |
| 300 | 1.2.5.1.3 | **前后端联调** | 0.5d | 2020-01-03 14:00 | 2020-01-06 09:00 |  | 6.5d |  |  | 4h |
| 301 | 1.2.5.1.3.1 | 采购单批量导入接口 | 0.5d | 2020-01-03 14:00 | 2020-01-06 09:00 | 299 | 6.5d | 0d | 杨迎 | 4h |
| 302 | 1.2.5.2 | **供货单管理** | 15d | 2019-12-13 14:00 | 2020-01-06 14:00 |  | 7.5d |  |  | 84h |
| 303 | 1.2.5.2.1 | **后端设计** | 4d | 2019-12-13 14:00 | 2019-12-19 14:00 |  | 14.5d |  |  | 16h |
| 304 | 1.2.5.2.1.1 | 接口详细设计 | 4d | 2019-12-13 14:00 | 2019-12-19 14:00 | 297 | 14.5d | 0d | 罗荣熙 [50%] | 16h |

| ID | WBS | Task | Type | Duration | Start | Finish | Predecessors | Total slack | Free slack | Resources | Work |
| --- | --- | --- | --- | --- | --- | --- | --- | --- | --- | --- | --- |
| 305 | 1.2.5.2.2 | **后端开发** |  | 4d | 2019-12-27 14:00 | 2020-01-03 14:00 |  | 0d |  |  | 44h |
| 306 | 1.2.5.2.2.1 | 分页列表查询接口改造（返回供应商名称字段） |  | 0.5d | 2019-12-31 14:00 | 2020-01-02 09:00 | 290 | 1.5d | 0d | 郑海文 | 4h |
| 307 | 1.2.5.2.2.2 | 供货单打印接口 |  | 2d | 2019-12-27 14:00 | 2019-12-31 14:00 | 289 | 0d |  | 文超 | 16h |
| 308 | 1.2.5.2.2.3 | 一键生成标签接口 |  | 2d | 2019-12-31 14:00 | 2020-01-03 14:00 | 290 | 7.5d | 0d | 杨朝辉 | 16h |
| 309 | 1.2.5.2.2.4 | 供货单批量导出接口（支持条件查询） |  | 1d | 2020-01-02 09:00 | 2020-01-03 09:00 | 306 | 1.5d | 0d | 郑海文 | 8h |
| 310 | 1.2.5.2.3 | **前后端联调** |  | 3d | 2019-12-31 14:00 | 2020-01-06 14:00 |  | 0d |  |  | 24h |
| 311 | 1.2.5.2.3.1 | 分页列表查询接口改造（返回供应商名称字段） |  | 0.5d | 2020-01-03 09:00 | 2020-01-03 14:00 | 309 | 1.5d | 0d | 郑海文 | 4h |
| 312 | 1.2.5.2.3.2 | 供货单打印接口 |  | 1d | 2019-12-31 14:00 | 2020-01-02 14:00 | 307 | 0d |  | 文超 | 8h |
| 313 | 1.2.5.2.3.3 | 一键生成标签接口 |  | 1d | 2020-01-03 14:00 | 2020-01-06 14:00 | 308 | 7.5d |  | 杨朝辉 | 8h |
| 314 | 1.2.5.2.3.4 | 供货单批量导出接口（支持条件查询） |  | 0.5d | 2020-01-03 14:00 | 2020-01-06 09:00 | 311 | 1.5d | 0d | 郑海文 | 4h |
| 315 | 1.2.5.3 | **标签管理** |  | 12d | 2019-12-19 14:00 | 2020-01-07 14:00 |  | 6.5d |  |  | 28h |
| 316 | 1.2.5.3.1 | **后端设计** |  | 4d | 2019-12-19 14:00 | 2019-12-25 14:00 |  | 14.5d |  |  | 16h |
| 317 | 1.2.5.3.1.1 | 打包标签自适应设计 |  | 4d | 2019-12-19 14:00 | 2019-12-25 14:00 | 304 | 14.5d |  | 罗荣熙 [50%] | 16h |
| 318 | 1.2.5.3.2 | **后端开发** |  | 1d | 2020-01-06 09:00 | 2020-01-07 09:00 |  | 6.5d |  |  | 8h |
| 319 | 1.2.5.3.2.1 | 后端打印标签接口改造 |  | 1d | 2020-01-06 09:00 | 2020-01-07 09:00 | 301 | 6.5d | 0d | 杨迎 | 8h |
| 320 | 1.2.5.3.3 | **前后端联调** |  | 0.5d | 2020-01-07 09:00 | 2020-01-07 14:00 |  | 6.5d |  |  | 4h |
| 321 | 1.2.5.3.3.1 | 后端打印标记接口改造 |  | 0.5d | 2020-01-07 09:00 | 2020-01-07 14:00 | 319 | 6.5d |  | 杨迎 | 4h |
| 322 | 1.2.5.4 | **验收单管理** |  | 0.5d | 2020-01-06 09:00 | 2020-01-06 14:00 |  | 1.5d |  |  | 4h |
| 323 | 1.2.5.4.1 | **后端开发** |  | 0.5d | 2020-01-06 09:00 | 2020-01-06 14:00 |  | 1.5d |  |  | 4h |
| 324 | 1.2.5.4.1.1 | 验收单转换任务（从临时表到MCP业务表），“验收单号”字段值，如果医院有回传，则记录医院的验收单号，否则系统自动生成。 |  | 0.5d | 2020-01-06 09:00 | 2020-01-06 14:00 | 314 | 1.5d | 0d | 郑海文 | 4h |
| 325 | 1.2.5.4.2 | **外部系统联调** | inactive | 0.5d | 2019-10-08 09:00 | 2019-10-08 14:00 |  | 71.5d |  |  | 4h |
| 326 | 1.2.5.4.2.1 | 验收单数据下发（从MCP临时表到DSC） | inactive | 0.5d | 2019-10-08 09:00 | 2019-10-08 14:00 |  | 71.5d |  |  | 4h |
| 327 | 1.2.5.5 | 研发人员自测 |  | 2d | 2020-01-06 14:00 | 2020-01-08 14:00 | 324 | 1.5d | 0d | 产品研发团队 | 16h |
| 328 | 1.2.5.6 | **测试介入** |  | 4d | 2020-01-08 14:00 | 2020-01-14 14:00 |  | 1.5d |  |  | 32h |
| 329 | 1.2.5.6.1 | 封闭测试 |  | 2d | 2020-01-08 14:00 | 2020-01-10 14:00 | 327 | 1.5d | 0d | 产品测试团队 | 16h |
| 330 | 1.2.5.6.2 | bug修复回归测试 |  | 2d | 2020-01-10 14:00 | 2020-01-14 14:00 | 329 | 1.5d |  | 产品研发 | 16h |

| ID | WBS | Task | Type | Duration | Start | Finish | Total slack | Work |
| --- | --- | --- | --- | --- | --- | --- | --- | --- |
| 331 | 1.2.6 | **证照管理** | inactive | 2d | 2019-10-08 09:00 | 2019-10-10 09:00 | 70d | 292h |
| 332 | 1.2.6.1 | **后端设计** | inactive | 0.5d | 2019-10-08 09:00 | 2019-10-08 14:00 | 71.5d | 20h |
| 333 | 1.2.6.1.1 | **ETL数据同步设计** | inactive | 0.5d | 2019-10-08 09:00 | 2019-10-08 14:00 | 71.5d | 20h |
| 334 | 1.2.6.1.1.1 | 证照分类信息上传（ETL数据同步，从MCP临时表到DSC） | inactive | 0.5d | 2019-10-08 09:00 | 2019-10-08 14:00 | 71.5d | 4h |
| 335 | 1.2.6.1.1.2 | 厂商证照信息上传（ETL数据同步，从MCP临时表到DSC） | inactive | 0.5d | 2019-10-08 09:00 | 2019-10-08 14:00 | 71.5d | 4h |
| 336 | 1.2.6.1.1.3 | 供应商证照信息上传（ETL数据同步，从MCP临时表到DSC） | inactive | 0.5d | 2019-10-08 09:00 | 2019-10-08 14:00 | 71.5d | 4h |
| 337 | 1.2.6.1.1.4 | 商品证照信息上传（ETL数据同步，从MCP临时表到DSC） | inactive | 0.5d | 2019-10-08 09:00 | 2019-10-08 14:00 | 71.5d | 4h |
| 338 | 1.2.6.1.1.5 | 证照审批信息上传（ETL数据同步，从MCP临时表到DSC） | inactive | 0.5d | 2019-10-08 09:00 | 2019-10-08 14:00 | 71.5d | 4h |
| 339 | 1.2.6.2 | **后端开发** | inactive | 2d | 2019-10-08 09:00 | 2019-10-10 09:00 | 70d | 180h |
| 340 | 1.2.6.2.1 | 商品证照添加/编辑时，选择供应商商品接口改造（商品列表返回的商品名称和批准文号/注册证号） | inactive | 0.5d | 2019-10-08 09:00 | 2019-10-08 14:00 | 71.5d | 4h |
| 341 | 1.2.6.2.2 | 厂商证照批量导入接口 | inactive | 2d | 2019-10-08 09:00 | 2019-10-10 09:00 | 70d | 16h |
| 342 | 1.2.6.2.3 | 厂商证照批量导出接口（支持条件查询） | inactive | 2d | 2019-10-08 09:00 | 2019-10-10 09:00 | 70d | 8h |
| 343 | 1.2.6.2.4 | 供应商证照批量导入接口 | inactive | 2d | 2019-10-08 09:00 | 2019-10-10 09:00 | 70d | 16h |
| 344 | 1.2.6.2.5 | 供应商证照批量导出接口（支持条件查询） | inactive | 2d | 2019-10-08 09:00 | 2019-10-10 09:00 | 70d | 8h |
| 345 | 1.2.6.2.6 | 商品证照批量导入接口 | inactive | 2d | 2019-10-08 09:00 | 2019-10-10 09:00 | 70d | 16h |
| 346 | 1.2.6.2.7 | 商品证照批量导出接口（支持条件查询） | inactive | 2d | 2019-10-08 09:00 | 2019-10-10 09:00 | 70d | 8h |
| 347 | 1.2.6.2.8 | 代理商证照批量导入接口 | inactive | 2d | 2019-10-08 09:00 | 2019-10-10 09:00 | 70d | 16h |
| 348 | 1.2.6.2.9 | 代理商证照批量导出接口（支持条件查询） | inactive | 2d | 2019-10-08 09:00 | 2019-10-10 09:00 | 70d | 8h |
| 349 | 1.2.6.2.10 | 证照分类转换任务（从MCP业务表到临时表） | inactive | 2d | 2019-10-08 09:00 | 2019-10-10 09:00 | 70d | 16h |
| 350 | 1.2.6.2.11 | 厂商证照转换任务（从MCP业务表到临时表） | inactive | 2d | 2019-10-08 09:00 | 2019-10-10 09:00 | 70d | 16h |
| 351 | 1.2.6.2.12 | 供应商证照转换任务（从MCP业务表到临时表） | inactive | 2d | 2019-10-08 09:00 | 2019-10-10 09:00 | 70d | 16h |
| 352 | 1.2.6.2.13 | 商品证照转换任务（从MCP业务表到临时表） | inactive | 2d | 2019-10-08 09:00 | 2019-10-10 09:00 | 70d | 16h |
| 353 | 1.2.6.2.14 | 证照审批转换任务（从MCP业务表到临时表） | inactive | 2d | 2019-10-08 09:00 | 2019-10-10 09:00 | 70d | 16h |
| 354 | 1.2.6.3 | **前后端联调** | inactive | 0.5d | 2019-10-08 09:00 | 2019-10-08 14:00 | 71.5d | 36h |
| 355 | 1.2.6.3.1 | 商品证照添加/编辑时，选择供应商商品接口改造（商品列表返回的商品名称和批准文号/注册证号） | inactive | 0.5d | 2019-10-08 09:00 | 2019-10-08 14:00 | 71.5d | 4h |
| 356 | 1.2.6.3.2 | 厂商证照批量导入接口 | inactive | 0.5d | 2019-10-08 09:00 | 2019-10-08 14:00 | 71.5d | 4h |
| 357 | 1.2.6.3.3 | 厂商证照批量导出接口（支持条件查询） | inactive | 0.5d | 2019-10-08 09:00 | 2019-10-08 14:00 | 71.5d | 4h |
| 358 | 1.2.6.3.4 | 供应商证照批量导入接口 | inactive | 0.5d | 2019-10-08 09:00 | 2019-10-08 14:00 | 71.5d | 4h |
| 359 | 1.2.6.3.5 | 供应商证照批量导出接口（支持条件查询） | inactive | 0.5d | 2019-10-08 09:00 | 2019-10-08 14:00 | 71.5d | 4h |
| 360 | 1.2.6.3.6 | 商品证照批量导入接口 | inactive | 0.5d | 2019-10-08 09:00 | 2019-10-08 14:00 | 71.5d | 4h |
| 361 | 1.2.6.3.7 | 商品证照批量导出接口（支持条件查询） | inactive | 0.5d | 2019-10-08 09:00 | 2019-10-08 14:00 | 71.5d | 4h |
| 362 | 1.2.6.3.8 | 代理商证照批量导入接口 | inactive | 0.5d | 2019-10-08 09:00 | 2019-10-08 14:00 | 71.5d | 4h |
| 363 | 1.2.6.3.9 | 代理商证照批量导出接口（支持条件查询） | inactive | 0.5d | 2019-10-08 09:00 | 2019-10-08 14:00 | 71.5d | 4h |

| ID | WBS | Task | Type | Duration | Start | Finish | Complete | Remaining | Total slack | Work | Actual work |
| --- | --- | --- | --- | --- | --- | --- | --- | --- | --- | --- | --- |
| 364 | 1.2.6.4 | **外部系统联调** | inactive | 1d | 2019-10-08 09:00 | 2019-10-09 09:00 |  |  | 71d | 40h |  |
| 365 | 1.2.6.4.1 | 证照分类信息上传（ETL数据同步，从MCP临时表到DSC） | inactive | 1d | 2019-10-08 09:00 | 2019-10-09 09:00 |  |  | 71d | 8h |  |
| 366 | 1.2.6.4.2 | 厂商证照信息上传（ETL数据同步，从MCP临时表到DSC） | inactive | 1d | 2019-10-08 09:00 | 2019-10-09 09:00 |  |  | 71d | 8h |  |
| 367 | 1.2.6.4.3 | 供应商证照信息上传（ETL数据同步，从MCP临时表到DSC） | inactive | 1d | 2019-10-08 09:00 | 2019-10-09 09:00 |  |  | 71d | 8h |  |
| 368 | 1.2.6.4.4 | 商品证照信息上传（ETL数据同步，从MCP临时表到DSC） | inactive | 1d | 2019-10-08 09:00 | 2019-10-09 09:00 |  |  | 71d | 8h |  |
| 369 | 1.2.6.4.5 | 证照审批信息上传（ETL数据同步，从MCP临时表到DSC） | inactive | 1d | 2019-10-08 09:00 | 2019-10-09 09:00 |  |  | 71d | 8h |  |
| 370 | 1.2.6.5 | 研发人员自测 | inactive | 2d | 2019-10-08 09:00 | 2019-10-10 09:00 |  |  | 70d | 16h |  |
| 371 | 1.3 | **退货管理** |  | 20d | 2019-10-12 14:00 A | 2019-11-08 14:00 | 93% | 1.45d | 0d | 188h | 172h |
| 372 | 1.3.1 | **退货申请单管理** | inactive | 3d | 2019-10-08 09:00 | 2019-10-11 09:00 |  |  | 69d | 200h |  |
| 373 | 1.3.1.1 | **后端设计** | inactive | 3d | 2019-10-08 09:00 | 2019-10-11 09:00 |  |  | 69d | 40h |  |
| 374 | 1.3.1.1.1 | 表结构设计 | inactive | 1d | 2019-10-08 09:00 | 2019-10-09 09:00 |  |  | 71d | 8h |  |
| 375 | 1.3.1.1.2 | 接口详细设计 | inactive | 3d | 2019-10-08 09:00 | 2019-10-11 09:00 |  |  | 69d | 24h |  |
| 376 | 1.3.1.1.3 | **ETL数据同步设计** | inactive | 0.5d | 2019-10-08 09:00 | 2019-10-08 14:00 |  |  | 71.5d | 8h |  |
| 377 | 1.3.1.1.3.1 | 退货申请单数据上传（ETL数据同步，从DSC到MCP临时表） | inactive | 0.5d | 2019-10-08 09:00 | 2019-10-08 14:00 |  |  | 71.5d | 4h |  |
| 378 | 1.3.1.1.3.2 | 退货申请单确认状态下发（ETL数据同步，从MCP临时表到DSC） | inactive | 0.5d | 2019-10-08 09:00 | 2019-10-08 14:00 |  |  | 71.5d | 4h |  |
| 379 | 1.3.1.2 | **后端开发** | inactive | 2d | 2019-10-08 09:00 | 2019-10-10 09:00 |  |  | 70d | 88h |  |
| 380 | 1.3.1.2.1 | 主单分页列表查询接口 | inactive | 0.5d | 2019-10-08 09:00 | 2019-10-08 14:00 |  |  | 71.5d | 4h |  |
| 381 | 1.3.1.2.2 | 细单分页列表查询接口 | inactive | 0.5d | 2019-10-08 09:00 | 2019-10-08 14:00 |  |  | 71.5d | 4h |  |
| 382 | 1.3.1.2.3 | 主细单数据批量导入接口 | inactive | 2d | 2019-10-08 09:00 | 2019-10-10 09:00 |  |  | 70d | 16h |  |
| 383 | 1.3.1.2.4 | 主细单数据批量导出接口（支持条件查询） | inactive | 2d | 2019-10-08 09:00 | 2019-10-10 09:00 |  |  | 70d | 8h |  |
| 384 | 1.3.1.2.5 | 申请单审批接口 | inactive | 2d | 2019-10-08 09:00 | 2019-10-10 09:00 |  |  | 70d | 16h |  |
| 385 | 1.3.1.2.6 | 手动生成退货单接口 | inactive | 1d | 2019-10-08 09:00 | 2019-10-09 09:00 |  |  | 71d | 8h |  |
| 386 | 1.3.1.2.7 | 自动生成退货单任务 | inactive | 2d | 2019-10-08 09:00 | 2019-10-10 09:00 |  |  | 70d | 16h |  |
| 387 | 1.3.1.2.8 | 退货申请单数据转换任务（从临时表到MCP业务表） | inactive | 1d | 2019-10-08 09:00 | 2019-10-09 09:00 |  |  | 71d | 8h |  |
| 388 | 1.3.1.2.9 | 退货申请单确认状态下发任务（从MCP业务表到临时表） | inactive | 1d | 2019-10-08 09:00 | 2019-10-09 09:00 |  |  | 71d | 8h |  |

| ID | WBS | Task | Type | Duration | Start | Finish | Predecessors | Complete | Remaining | Total slack | Resources | Work | Actual work |
| --- | --- | --- | --- | --- | --- | --- | --- | --- | --- | --- | --- | --- | --- |
| 389 | 1.3.1.3 | **前端开发** | inactive | 1d | 2019-10-08 09:00 | 2019-10-09 09:00 |  |  |  | 71d |  | 16h |  |
| 390 | 1.3.1.3.1 | 申请单分页列表界面 | inactive | 0.5d | 2019-10-08 09:00 | 2019-10-08 14:00 |  |  |  | 71.5d |  | 4h |  |
| 391 | 1.3.1.3.2 | 手动生成退货单界面 | inactive | 0.5d | 2019-10-08 09:00 | 2019-10-08 14:00 |  |  |  | 71.5d |  | 4h |  |
| 392 | 1.3.1.3.3 | 申请单审批界面开发 | inactive | 1d | 2019-10-08 09:00 | 2019-10-09 09:00 |  |  |  | 71d |  | 8h |  |
| 393 | 1.3.1.4 | **前后端联调** | inactive | 0.5d | 2019-10-08 09:00 | 2019-10-08 14:00 |  |  |  | 71.5d |  | 24h |  |
| 394 | 1.3.1.4.1 | 主单分页列表查询接口 | inactive | 0.5d | 2019-10-08 09:00 | 2019-10-08 14:00 |  |  |  | 71.5d |  | 4h |  |
| 395 | 1.3.1.4.2 | 细单分页列表查询接口 | inactive | 0.5d | 2019-10-08 09:00 | 2019-10-08 14:00 |  |  |  | 71.5d |  | 4h |  |
| 396 | 1.3.1.4.3 | 主细单数据批量导入接口 | inactive | 0.5d | 2019-10-08 09:00 | 2019-10-08 14:00 |  |  |  | 71.5d |  | 4h |  |
| 397 | 1.3.1.4.4 | 主细单数据批量导出接口（支持条件查询） | inactive | 0.5d | 2019-10-08 09:00 | 2019-10-08 14:00 |  |  |  | 71.5d |  | 4h |  |
| 398 | 1.3.1.4.5 | 申请单审批接口 | inactive | 0.5d | 2019-10-08 09:00 | 2019-10-08 14:00 |  |  |  | 71.5d |  | 4h |  |
| 399 | 1.3.1.4.6 | 手动生成退货单接口 | inactive | 0.5d | 2019-10-08 09:00 | 2019-10-08 14:00 |  |  |  | 71.5d |  | 4h |  |
| 400 | 1.3.1.5 | **外部系统联调** | inactive | 1d | 2019-10-08 09:00 | 2019-10-09 09:00 |  |  |  | 71d |  | 16h |  |
| 401 | 1.3.1.5.1 | 退货申请单数据上传（ETL数据同步，从DSC到MCP临时表） | inactive | 1d | 2019-10-08 09:00 | 2019-10-09 09:00 |  |  |  | 71d |  | 8h |  |
| 402 | 1.3.1.5.2 | 退货申请单确认状态下发（ETL数据同步，从MCP临时表到DSC） | inactive | 1d | 2019-10-08 09:00 | 2019-10-09 09:00 |  |  |  | 71d |  | 8h |  |
| 403 | 1.3.1.6 | 研发人员自测 | inactive | 2d | 2019-10-08 09:00 | 2019-10-10 09:00 |  |  |  | 70d |  | 16h |  |
| 404 | 1.3.2 | **退货单管理** |  | 20d | 2019-10-12 14:00 A | 2019-11-08 14:00 |  | 93% | 1.45d | 0d |  | 188h | 172h |
| 405 | 1.3.2.1 | **后端设计** |  | 8d | 2019-10-12 14:00 A | 2019-10-23 14:00 A |  | 100% |  |  |  | 32h | 32h |
| 406 | 1.3.2.1.1 | 表结构设计 |  | 1d | 2019-10-12 14:00 A | 2019-10-14 14:00 A | 6 | 100% |  |  | 罗荣熙 [50%] | 4h | 4h |
| 407 | 1.3.2.1.2 | 接口详细设计 |  | 6d | 2019-10-14 14:00 A | 2019-10-22 14:00 A | 406 | 100% |  |  | 罗荣熙 [50%] | 24h | 24h |
| 408 | 1.3.2.1.3 | **ETL数据同步设计** |  | 1d | 2019-10-22 14:00 A | 2019-10-23 14:00 A |  | 100% |  |  |  | 4h | 4h |
| 409 | 1.3.2.1.3.1 | 退货单数据上传（ETL数据同步，从DSC到MCP临时表） |  | 1d | 2019-10-22 14:00 A | 2019-10-23 14:00 A | 407 | 100% |  |  | 罗荣熙 [50%] | 4h | 4h |
| 410 | 1.3.2.2 | **后端开发** |  | 5d | 2019-10-23 14:00 A | 2019-10-30 14:00 A |  | 100% |  |  |  | 60h | 60h |
| 411 | 1.3.2.2.1 | 主单分页列表查询接口 |  | 0.5d | 2019-10-23 14:00 A | 2019-10-24 09:00 A | 27 | 100% |  |  | 文超 | 4h | 4h |
| 412 | 1.3.2.2.2 | 细单分页列表查询接口 |  | 0.5d | 2019-10-24 09:00 A | 2019-10-24 14:00 A | 411 | 100% |  |  | 文超 | 4h | 4h |
| 413 | 1.3.2.2.3 | 主细单数据批量导入接口 |  | 2d | 2019-10-24 14:00 A | 2019-10-28 14:00 A | 412 | 100% |  |  | 文超 | 16h | 16h |
| 414 | 1.3.2.2.4 | 主细单数据批量导出接口（支持条件查询） |  | 1d | 2019-10-28 14:00 A | 2019-10-29 14:00 A | 413 | 100% |  |  | 文超 | 8h | 8h |
| 415 | 1.3.2.2.5 | 退货单新增接口 |  | 1d | 2019-10-23 14:00 A | 2019-10-24 14:00 A | 27 | 100% |  |  | 杨迎 | 8h | 8h |
| 416 | 1.3.2.2.6 | 退货单编辑接口 |  | 1d | 2019-10-24 14:00 A | 2019-10-25 14:00 A | 415 | 100% |  |  | 杨迎 | 8h | 8h |
| 417 | 1.3.2.2.7 | 退货单删除接口 |  | 0.5d | 2019-10-25 14:00 A | 2019-10-28 09:00 A | 416 | 100% |  |  | 杨迎 | 4h | 4h |
| 418 | 1.3.2.2.8 | 退货单转换任务（从临时表到MCP业务表） |  | 1d | 2019-10-29 14:00 A | 2019-10-30 14:00 A | 414 | 100% |  |  | 文超 | 8h | 8h |

| ID | WBS | Task | Type | Duration | Start | Finish | Predecessors | Complete | Remaining | Total slack | Resources | Work | Actual work |
| --- | --- | --- | --- | --- | --- | --- | --- | --- | --- | --- | --- | --- | --- |
| 419 | 1.3.2.3 | **前端开发** |  | 1.5d | 2019-10-23 14:00 A | 2019-10-25 09:00 A |  | 100% |  |  |  | 12h | 12h |
| 420 | 1.3.2.3.1 | 退货单分页列表界面 |  | 0.5d | 2019-10-23 14:00 A | 2019-10-24 09:00 A | 27 | 100% |  |  | 莫世坚 | 4h | 4h |
| 421 | 1.3.2.3.2 | 退货单新增界面 |  | 0.5d | 2019-10-24 09:00 A | 2019-10-24 14:00 A | 420 | 100% |  |  | 莫世坚 | 4h | 4h |
| 422 | 1.3.2.3.3 | 退货单编辑界面 |  | 0.5d | 2019-10-24 14:00 A | 2019-10-25 09:00 A | 421 | 100% |  |  | 莫世坚 | 4h | 4h |
| 423 | 1.3.2.4 | **前后端联调** |  | 3.5d | 2019-10-28 09:00 A | 2019-10-31 14:00 A |  | 100% |  |  |  | 28h | 28h |
| 424 | 1.3.2.4.1 | 主单分页列表查询接口 |  | 0.5d | 2019-10-28 09:00 A | 2019-10-28 14:00 A | 417 | 100% |  |  | 杨迎 | 4h | 4h |
| 425 | 1.3.2.4.2 | 细单分页列表查询接口 |  | 0.5d | 2019-10-28 14:00 A | 2019-10-29 09:00 A | 424 | 100% |  |  | 杨迎 | 4h | 4h |
| 426 | 1.3.2.4.3 | 主细单数据批量导入接口 |  | 0.5d | 2019-10-29 09:00 A | 2019-10-29 14:00 A | 425 | 100% |  |  | 杨迎 | 4h | 4h |
| 427 | 1.3.2.4.4 | 主细单数据批量导出接口（支持条件查询） |  | 0.5d | 2019-10-29 14:00 A | 2019-10-30 09:00 A | 426 | 100% |  |  | 杨迎 | 4h | 4h |
| 428 | 1.3.2.4.5 | 退货单新增接口 |  | 0.5d | 2019-10-30 09:00 A | 2019-10-30 14:00 A | 427 | 100% |  |  | 杨迎 | 4h | 4h |
| 429 | 1.3.2.4.6 | 退货单编辑接口 |  | 0.5d | 2019-10-30 14:00 A | 2019-10-31 09:00 A | 428 | 100% |  |  | 杨迎 | 4h | 4h |
| 430 | 1.3.2.4.7 | 退货单删除接口 |  | 0.5d | 2019-10-31 09:00 A | 2019-10-31 14:00 A | 429 | 100% |  |  | 杨迎 | 4h | 4h |
| 431 | 1.3.2.5 | **外部系统联调** |  | 1d | 2019-10-30 14:00 A | 2019-10-31 14:00 A |  | 100% |  |  |  | 8h | 8h |
| 432 | 1.3.2.5.1 | 退货单数据上传（ETL数据同步，从DSC到MCP临时表） |  | 1d | 2019-10-30 14:00 A | 2019-10-31 14:00 A | 418 | 100% |  |  | 文超 | 8h | 8h |
| 433 | 1.3.2.6 | 研发人员自测 |  | 2d | 2019-10-31 14:00 A | 2019-11-04 14:00 A | 432 | 100% |  |  | 产品研发团队 | 16h | 16h |
| 434 | 1.3.2.7 | **测试介入** |  | 4d | 2019-11-04 14:00 A | 2019-11-08 14:00 |  | 50% | 2d | 0d |  | 32h | 16h |
| 435 | 1.3.2.7.1 | 封闭测试 |  | 2d | 2019-11-04 14:00 A | 2019-11-06 14:00 A | 433 | 100% |  |  | 产品测试团队 | 16h | 16h |
| 436 | 1.3.2.7.2 | bug修复回归测试 |  | 2d | 2019-11-06 14:00 | 2019-11-08 14:00 | 435 |  |  | 0d | 产品研发 | 16h |  |
| 437 | 1.4 | **骨科跟台** | inactive | 3d | 2019-10-08 09:00 | 2019-10-11 09:00 |  |  |  | 69d |  | 688h |  |
| 438 | 1.4.1 | **骨科耗材商品入库** | inactive | 1d | 2019-10-08 09:00 | 2019-10-09 09:00 |  |  |  | 71d |  | 20h |  |
| 439 | 1.4.1.1 | **后端设计** | inactive | 0.5d | 2019-10-08 09:00 | 2019-10-08 14:00 |  |  |  | 71.5d |  | 4h |  |
| 440 | 1.4.1.1.1 | **ETL数据同步设计** | inactive | 0.5d | 2019-10-08 09:00 | 2019-10-08 14:00 |  |  |  | 71.5d |  | 4h |  |
| 441 | 1.4.1.1.1.1 | 医院骨科耗材商品上传（ETL数据同步，从DSC上传到MCP临时表） | inactive | 0.5d | 2019-10-08 09:00 | 2019-10-08 14:00 |  |  |  | 71.5d |  | 4h |  |
| 442 | 1.4.1.2 | **后端开发** | inactive | 1d | 2019-10-08 09:00 | 2019-10-09 09:00 |  |  |  | 71d |  | 16h |  |
| 443 | 1.4.1.2.1 | 医院骨科耗材商品转换任务（从临时表到MCP业务表） | inactive | 1d | 2019-10-08 09:00 | 2019-10-09 09:00 |  |  |  | 71d |  | 8h |  |
| 444 | 1.4.1.2.2 | 骨科耗材查询列表接口（查询条件：骨科耗材商品名称） | inactive | 1d | 2019-10-08 09:00 | 2019-10-09 09:00 |  |  |  | 71d |  | 8h |  |

| ID | WBS | Task | Type | Duration | Start | Finish | Total slack | Work |
| --- | --- | --- | --- | --- | --- | --- | --- | --- |
| 445 | 1.4.2 | **器械包管理** | inactive | 3d | 2019-10-08 09:00 | 2019-10-11 09:00 | 69d | 156h |
| 446 | 1.4.2.1 | **后端设计** | inactive | 3d | 2019-10-08 09:00 | 2019-10-11 09:00 | 69d | 32h |
| 447 | 1.4.2.1.1 | 表结构设计 | inactive | 1d | 2019-10-08 09:00 | 2019-10-09 09:00 | 71d | 8h |
| 448 | 1.4.2.1.2 | 接口详细设计 | inactive | 3d | 2019-10-08 09:00 | 2019-10-11 09:00 | 69d | 24h |
| 449 | 1.4.2.2 | **后端开发** | inactive | 2d | 2019-10-08 09:00 | 2019-10-10 09:00 | 70d | 64h |
| 450 | 1.4.2.2.1 | 分页列表查询接口 | inactive | 1d | 2019-10-08 09:00 | 2019-10-09 09:00 | 71d | 8h |
| 451 | 1.4.2.2.2 | 器械包条件查询接口（查询条件：器械包名称、器械包编号） | inactive | 1d | 2019-10-08 09:00 | 2019-10-09 09:00 | 71d | 8h |
| 452 | 1.4.2.2.3 | 新增器械包接口 | inactive | 1d | 2019-10-08 09:00 | 2019-10-09 09:00 | 71d | 8h |
| 453 | 1.4.2.2.4 | 编辑器械包接口 | inactive | 1d | 2019-10-08 09:00 | 2019-10-09 09:00 | 71d | 8h |
| 454 | 1.4.2.2.5 | 停用/启用器械包接口 | inactive | 0.5d | 2019-10-08 09:00 | 2019-10-08 14:00 | 71.5d | 4h |
| 455 | 1.4.2.2.6 | 删除器械包接口 | inactive | 0.5d | 2019-10-08 09:00 | 2019-10-08 14:00 | 71.5d | 4h |
| 456 | 1.4.2.2.7 | 器械包批量导入接口 | inactive | 2d | 2019-10-08 09:00 | 2019-10-10 09:00 | 70d | 16h |
| 457 | 1.4.2.2.8 | 器械包批量导出接口（支持条件查询） | inactive | 2d | 2019-10-08 09:00 | 2019-10-10 09:00 | 70d | 8h |
| 458 | 1.4.2.3 | **前端开发** | inactive | 0.5d | 2019-10-08 09:00 | 2019-10-08 14:00 | 71.5d | 12h |
| 459 | 1.4.2.3.1 | 分页列表查询界面开发 | inactive | 0.5d | 2019-10-08 09:00 | 2019-10-08 14:00 | 71.5d | 4h |
| 460 | 1.4.2.3.2 | 新增器械包界面开发 | inactive | 0.5d | 2019-10-08 09:00 | 2019-10-08 14:00 | 71.5d | 4h |
| 461 | 1.4.2.3.3 | 编辑器械包界面开发 | inactive | 0.5d | 2019-10-08 09:00 | 2019-10-08 14:00 | 71.5d | 4h |
| 462 | 1.4.2.4 | **前后端联调** | inactive | 0.5d | 2019-10-08 09:00 | 2019-10-08 14:00 | 71.5d | 32h |
| 463 | 1.4.2.4.1 | 分页列表查询接口 | inactive | 0.5d | 2019-10-08 09:00 | 2019-10-08 14:00 | 71.5d | 4h |
| 464 | 1.4.2.4.2 | 骨科耗材查询列表接口（查询条件：骨科耗材商品名称） | inactive | 0.5d | 2019-10-08 09:00 | 2019-10-08 14:00 | 71.5d | 4h |
| 465 | 1.4.2.4.3 | 新增器械包接口 | inactive | 0.5d | 2019-10-08 09:00 | 2019-10-08 14:00 | 71.5d | 4h |
| 466 | 1.4.2.4.4 | 编辑器械包接口 | inactive | 0.5d | 2019-10-08 09:00 | 2019-10-08 14:00 | 71.5d | 4h |
| 467 | 1.4.2.4.5 | 停用/启用器械包接口 | inactive | 0.5d | 2019-10-08 09:00 | 2019-10-08 14:00 | 71.5d | 4h |
| 468 | 1.4.2.4.6 | 删除器械包接口 | inactive | 0.5d | 2019-10-08 09:00 | 2019-10-08 14:00 | 71.5d | 4h |
| 469 | 1.4.2.4.7 | 器械包批量导入接口 | inactive | 0.5d | 2019-10-08 09:00 | 2019-10-08 14:00 | 71.5d | 4h |
| 470 | 1.4.2.4.8 | 器械包批量导出接口（支持条件查询） | inactive | 0.5d | 2019-10-08 09:00 | 2019-10-08 14:00 | 71.5d | 4h |
| 471 | 1.4.2.5 | 研发人员自测 | inactive | 2d | 2019-10-08 09:00 | 2019-10-10 09:00 | 70d | 16h |

| ID | WBS | Task | Type | Duration | Start | Finish | Total slack | Work |
| --- | --- | --- | --- | --- | --- | --- | --- | --- |
| 472 | 1.4.3 | **手术套包管理** | inactive | 3d | 2019-10-08 09:00 | 2019-10-11 09:00 | 69d | 152h |
| 473 | 1.4.3.1 | **后端设计** | inactive | 3d | 2019-10-08 09:00 | 2019-10-11 09:00 | 69d | 32h |
| 474 | 1.4.3.1.1 | 表结构设计 | inactive | 1d | 2019-10-08 09:00 | 2019-10-09 09:00 | 71d | 8h |
| 475 | 1.4.3.1.2 | 接口详细设计 | inactive | 3d | 2019-10-08 09:00 | 2019-10-11 09:00 | 69d | 24h |
| 476 | 1.4.3.2 | **后端开发** | inactive | 2d | 2019-10-08 09:00 | 2019-10-10 09:00 | 70d | 56h |
| 477 | 1.4.3.2.1 | 分页列表查询接口 | inactive | 1d | 2019-10-08 09:00 | 2019-10-09 09:00 | 71d | 8h |
| 478 | 1.4.3.2.2 | 新增手术套包接口 | inactive | 1d | 2019-10-08 09:00 | 2019-10-09 09:00 | 71d | 8h |
| 479 | 1.4.3.2.3 | 编辑手术套包接口 | inactive | 1d | 2019-10-08 09:00 | 2019-10-09 09:00 | 71d | 8h |
| 480 | 1.4.3.2.4 | 停用/启用手术套包接口 | inactive | 0.5d | 2019-10-08 09:00 | 2019-10-08 14:00 | 71.5d | 4h |
| 481 | 1.4.3.2.5 | 删除手术套包接口 | inactive | 0.5d | 2019-10-08 09:00 | 2019-10-08 14:00 | 71.5d | 4h |
| 482 | 1.4.3.2.6 | 手术套包批量导入接口 | inactive | 2d | 2019-10-08 09:00 | 2019-10-10 09:00 | 70d | 16h |
| 483 | 1.4.3.2.7 | 手术套包批量导出接口（支持条件查询） | inactive | 2d | 2019-10-08 09:00 | 2019-10-10 09:00 | 70d | 8h |
| 484 | 1.4.3.3 | **前端开发** | inactive | 0.5d | 2019-10-08 09:00 | 2019-10-08 14:00 | 71.5d | 16h |
| 485 | 1.4.3.3.1 | 分页列表查询界面开发 | inactive | 0.5d | 2019-10-08 09:00 | 2019-10-08 14:00 | 71.5d | 4h |
| 486 | 1.4.3.3.2 | 选择器械包界面开发 | inactive | 0.5d | 2019-10-08 09:00 | 2019-10-08 14:00 | 71.5d | 4h |
| 487 | 1.4.3.3.3 | 新增手术套包界面开发 | inactive | 0.5d | 2019-10-08 09:00 | 2019-10-08 14:00 | 71.5d | 4h |
| 488 | 1.4.3.3.4 | 编辑手术套包界面开发 | inactive | 0.5d | 2019-10-08 09:00 | 2019-10-08 14:00 | 71.5d | 4h |
| 489 | 1.4.3.4 | **前后端联调** | inactive | 0.5d | 2019-10-08 09:00 | 2019-10-08 14:00 | 71.5d | 32h |
| 490 | 1.4.3.4.1 | 分页列表查询接口 | inactive | 0.5d | 2019-10-08 09:00 | 2019-10-08 14:00 | 71.5d | 4h |
| 491 | 1.4.3.4.2 | 选择器械包条件查询接口（查询条件：器械包名称、器械包编号） | inactive | 0.5d | 2019-10-08 09:00 | 2019-10-08 14:00 | 71.5d | 4h |
| 492 | 1.4.3.4.3 | 新增手术套包接口 | inactive | 0.5d | 2019-10-08 09:00 | 2019-10-08 14:00 | 71.5d | 4h |
| 493 | 1.4.3.4.4 | 编辑手术套包接口 | inactive | 0.5d | 2019-10-08 09:00 | 2019-10-08 14:00 | 71.5d | 4h |
| 494 | 1.4.3.4.5 | 停用/启用手术套包接口 | inactive | 0.5d | 2019-10-08 09:00 | 2019-10-08 14:00 | 71.5d | 4h |
| 495 | 1.4.3.4.6 | 删除手术套包接口 | inactive | 0.5d | 2019-10-08 09:00 | 2019-10-08 14:00 | 71.5d | 4h |
| 496 | 1.4.3.4.7 | 手术套包批量导入接口 | inactive | 0.5d | 2019-10-08 09:00 | 2019-10-08 14:00 | 71.5d | 4h |
| 497 | 1.4.3.4.8 | 手术套包批量导出接口（支持条件查询） | inactive | 0.5d | 2019-10-08 09:00 | 2019-10-08 14:00 | 71.5d | 4h |
| 498 | 1.4.3.5 | 研发人员自测 | inactive | 2d | 2019-10-08 09:00 | 2019-10-10 09:00 | 70d | 16h |

| ID | WBS | Task | Type | Duration | Start | Finish | Total slack | Work |
| --- | --- | --- | --- | --- | --- | --- | --- | --- |
| 499 | 1.4.4 | **手术单管理** | inactive | 3d | 2019-10-08 09:00 | 2019-10-11 09:00 | 69d | 176h |
| 500 | 1.4.4.1 | **后端设计** | inactive | 3d | 2019-10-08 09:00 | 2019-10-11 09:00 | 69d | 36h |
| 501 | 1.4.4.1.1 | 表结构设计 | inactive | 1d | 2019-10-08 09:00 | 2019-10-09 09:00 | 71d | 8h |
| 502 | 1.4.4.1.2 | 接口详细设计 | inactive | 3d | 2019-10-08 09:00 | 2019-10-11 09:00 | 69d | 24h |
| 503 | 1.4.4.1.3 | **ETL数据同步设计** | inactive | 0.5d | 2019-10-08 09:00 | 2019-10-08 14:00 | 71.5d | 4h |
| 504 | 1.4.4.1.3.1 | 医院手术单数据上传（ETL数据同步，从DSC到MCP临时表） | inactive | 0.5d | 2019-10-08 09:00 | 2019-10-08 14:00 | 71.5d | 4h |
| 505 | 1.4.4.2 | **后端开发** | inactive | 2d | 2019-10-08 09:00 | 2019-10-10 09:00 | 70d | 68h |
| 506 | 1.4.4.2.1 | 医院手术单数据转换任务（从临时表到MCP业务表） | inactive | 1d | 2019-10-08 09:00 | 2019-10-09 09:00 | 71d | 8h |
| 507 | 1.4.4.2.2 | 分页列表查询接口 | inactive | 1d | 2019-10-08 09:00 | 2019-10-09 09:00 | 71d | 8h |
| 508 | 1.4.4.2.3 | 手术单新增接口 | inactive | 1d | 2019-10-08 09:00 | 2019-10-09 09:00 | 71d | 8h |
| 509 | 1.4.4.2.4 | 手术单编辑接口 | inactive | 1d | 2019-10-08 09:00 | 2019-10-09 09:00 | 71d | 8h |
| 510 | 1.4.4.2.5 | 手术单生成跟台目录接口 | inactive | 1d | 2019-10-08 09:00 | 2019-10-09 09:00 | 71d | 8h |
| 511 | 1.4.4.2.6 | 手术单删除接口 | inactive | 0.5d | 2019-10-08 09:00 | 2019-10-08 14:00 | 71.5d | 4h |
| 512 | 1.4.4.2.7 | 手术单批量导入接口 | inactive | 2d | 2019-10-08 09:00 | 2019-10-10 09:00 | 70d | 16h |
| 513 | 1.4.4.2.8 | 手术单批量导出接口（支持条件查询） | inactive | 2d | 2019-10-08 09:00 | 2019-10-10 09:00 | 70d | 8h |
| 514 | 1.4.4.3 | **前端开发** | inactive | 0.5d | 2019-10-08 09:00 | 2019-10-08 14:00 | 71.5d | 16h |
| 515 | 1.4.4.3.1 | 分页列表查询界面开发 | inactive | 0.5d | 2019-10-08 09:00 | 2019-10-08 14:00 | 71.5d | 4h |
| 516 | 1.4.4.3.2 | 新增界面开发 | inactive | 0.5d | 2019-10-08 09:00 | 2019-10-08 14:00 | 71.5d | 4h |
| 517 | 1.4.4.3.3 | 编辑界面开发 | inactive | 0.5d | 2019-10-08 09:00 | 2019-10-08 14:00 | 71.5d | 4h |
| 518 | 1.4.4.3.4 | 手动生成跟台目录界面开发 | inactive | 0.5d | 2019-10-08 09:00 | 2019-10-08 14:00 | 71.5d | 4h |
| 519 | 1.4.4.4 | **前后端联调** | inactive | 0.5d | 2019-10-08 09:00 | 2019-10-08 14:00 | 71.5d | 32h |
| 520 | 1.4.4.4.1 | 分页列表查询接口 | inactive | 0.5d | 2019-10-08 09:00 | 2019-10-08 14:00 | 71.5d | 4h |
| 521 | 1.4.4.4.2 | 手术单新增接口 | inactive | 0.5d | 2019-10-08 09:00 | 2019-10-08 14:00 | 71.5d | 4h |
| 522 | 1.4.4.4.3 | 手术单编辑接口 | inactive | 0.5d | 2019-10-08 09:00 | 2019-10-08 14:00 | 71.5d | 4h |
| 523 | 1.4.4.4.4 | 骨科耗材查询列表接口（查询条件：骨科耗材商品名称） | inactive | 0.5d | 2019-10-08 09:00 | 2019-10-08 14:00 | 71.5d | 4h |
| 524 | 1.4.4.4.5 | 手术单生成跟台目录接口 | inactive | 0.5d | 2019-10-08 09:00 | 2019-10-08 14:00 | 71.5d | 4h |
| 525 | 1.4.4.4.6 | 手术单删除接口 | inactive | 0.5d | 2019-10-08 09:00 | 2019-10-08 14:00 | 71.5d | 4h |
| 526 | 1.4.4.4.7 | 手术单批量导入接口 | inactive | 0.5d | 2019-10-08 09:00 | 2019-10-08 14:00 | 71.5d | 4h |
| 527 | 1.4.4.4.8 | 手术单批量导出接口（支持条件查询） | inactive | 0.5d | 2019-10-08 09:00 | 2019-10-08 14:00 | 71.5d | 4h |

| ID | WBS | Task | Type | Duration | Start | Finish | Total slack | Work |
| --- | --- | --- | --- | --- | --- | --- | --- | --- |
| 528 | 1.4.4.5 | **外部系统联调** | inactive | 1d | 2019-10-08 09:00 | 2019-10-09 09:00 | 71d | 8h |
| 529 | 1.4.4.5.1 | 医院手术单数据上传（ETL数据同步，从DSC到MCP临时表） | inactive | 1d | 2019-10-08 09:00 | 2019-10-09 09:00 | 71d | 8h |
| 530 | 1.4.4.6 | 研发人员自测 | inactive | 2d | 2019-10-08 09:00 | 2019-10-10 09:00 | 70d | 16h |
| 531 | 1.4.5 | **跟台目录管理** | inactive | 3d | 2019-10-08 09:00 | 2019-10-11 09:00 | 69d | 184h |
| 532 | 1.4.5.1 | **后端设计** | inactive | 3d | 2019-10-08 09:00 | 2019-10-11 09:00 | 69d | 36h |
| 533 | 1.4.5.1.1 | 表结构设计 | inactive | 1d | 2019-10-08 09:00 | 2019-10-09 09:00 | 71d | 8h |
| 534 | 1.4.5.1.2 | 结构详细设计 | inactive | 3d | 2019-10-08 09:00 | 2019-10-11 09:00 | 69d | 24h |
| 535 | 1.4.5.1.3 | **ETL数据同步设计** | inactive | 0.5d | 2019-10-08 09:00 | 2019-10-08 14:00 | 71.5d | 4h |
| 536 | 1.4.5.1.3.1 | 跟台目录数据下发（ETL数据同步，从MCP临时表下发到DSC） | inactive | 0.5d | 2019-10-08 09:00 | 2019-10-08 14:00 | 71.5d | 4h |
| 537 | 1.4.5.2 | **后端开发** | inactive | 2d | 2019-10-08 09:00 | 2019-10-10 09:00 | 70d | 76h |
| 538 | 1.4.5.2.1 | 跟台目录数据转换任务（从MCP业务表导临时表） | inactive | 1d | 2019-10-08 09:00 | 2019-10-09 09:00 | 71d | 8h |
| 539 | 1.4.5.2.2 | 分页列表查询接口 | inactive | 1d | 2019-10-08 09:00 | 2019-10-09 09:00 | 71d | 8h |
| 540 | 1.4.5.2.3 | 手术单列表查询接口（手术单编号查询） | inactive | 1d | 2019-10-08 09:00 | 2019-10-09 09:00 | 71d | 8h |
| 541 | 1.4.5.2.4 | 新增跟台目录接口 | inactive | 1d | 2019-10-08 09:00 | 2019-10-09 09:00 | 71d | 8h |
| 542 | 1.4.5.2.5 | 编辑跟台目录接口 | inactive | 1d | 2019-10-08 09:00 | 2019-10-09 09:00 | 71d | 8h |
| 543 | 1.4.5.2.6 | 跟台目录提交医院接口 | inactive | 1d | 2019-10-08 09:00 | 2019-10-09 09:00 | 71d | 8h |
| 544 | 1.4.5.2.7 | 删除根台目录接口 | inactive | 0.5d | 2019-10-08 09:00 | 2019-10-08 14:00 | 71.5d | 4h |
| 545 | 1.4.5.2.8 | 跟台目录批量导入接口 | inactive | 2d | 2019-10-08 09:00 | 2019-10-10 09:00 | 70d | 16h |
| 546 | 1.4.5.2.9 | 跟台目录批量导出接口（支持条件查询） | inactive | 2d | 2019-10-08 09:00 | 2019-10-10 09:00 | 70d | 8h |
| 547 | 1.4.5.3 | **前端开发** | inactive | 0.5d | 2019-10-08 09:00 | 2019-10-08 14:00 | 71.5d | 12h |
| 548 | 1.4.5.3.1 | 分页列表查询界面开发 | inactive | 0.5d | 2019-10-08 09:00 | 2019-10-08 14:00 | 71.5d | 4h |
| 549 | 1.4.5.3.2 | 新增界面开发 | inactive | 0.5d | 2019-10-08 09:00 | 2019-10-08 14:00 | 71.5d | 4h |
| 550 | 1.4.5.3.3 | 编辑界面开发 | inactive | 0.5d | 2019-10-08 09:00 | 2019-10-08 14:00 | 71.5d | 4h |
| 551 | 1.4.5.4 | **前后端联调** | inactive | 0.5d | 2019-10-08 09:00 | 2019-10-08 14:00 | 71.5d | 36h |
| 552 | 1.4.5.4.1 | 分页列表查询接口 | inactive | 0.5d | 2019-10-08 09:00 | 2019-10-08 14:00 | 71.5d | 4h |
| 553 | 1.4.5.4.2 | 手术单列表查询接口（手术单编号查询） | inactive | 0.5d | 2019-10-08 09:00 | 2019-10-08 14:00 | 71.5d | 4h |
| 554 | 1.4.5.4.3 | 骨科耗材查询列表接口（查询条件：骨科耗材商品名称） | inactive | 0.5d | 2019-10-08 09:00 | 2019-10-08 14:00 | 71.5d | 4h |
| 555 | 1.4.5.4.4 | 新增跟台目录接口 | inactive | 0.5d | 2019-10-08 09:00 | 2019-10-08 14:00 | 71.5d | 4h |
| 556 | 1.4.5.4.5 | 编辑跟台目录接口 | inactive | 0.5d | 2019-10-08 09:00 | 2019-10-08 14:00 | 71.5d | 4h |
| 557 | 1.4.5.4.6 | 跟台目录提交医院接口 | inactive | 0.5d | 2019-10-08 09:00 | 2019-10-08 14:00 | 71.5d | 4h |
| 558 | 1.4.5.4.7 | 删除根台目录接口 | inactive | 0.5d | 2019-10-08 09:00 | 2019-10-08 14:00 | 71.5d | 4h |
| 559 | 1.4.5.4.8 | 跟台目录批量导入接口 | inactive | 0.5d | 2019-10-08 09:00 | 2019-10-08 14:00 | 71.5d | 4h |
| 560 | 1.4.5.4.9 | 跟台目录批量导出接口（支持条件查询） | inactive | 0.5d | 2019-10-08 09:00 | 2019-10-08 14:00 | 71.5d | 4h |

| ID | WBS | Task | Type | Duration | Start | Finish | Predecessors | Total slack | Free slack | Resources | Work |
| --- | --- | --- | --- | --- | --- | --- | --- | --- | --- | --- | --- |
| 561 | 1.4.5.5 | **外部系统联调** | inactive | 1d | 2019-10-08 09:00 | 2019-10-09 09:00 |  | 71d |  |  | 8h |
| 562 | 1.4.5.5.1 | 跟台目录数据下发（ETL数据同步，从MCP临时表下发到DSC） | inactive | 1d | 2019-10-08 09:00 | 2019-10-09 09:00 |  | 71d |  |  | 8h |
| 563 | 1.4.5.6 | 研发人员自测 | inactive | 2d | 2019-10-08 09:00 | 2019-10-10 09:00 |  | 70d |  |  | 16h |
| 564 | 1.5 | **SPD数据同步对接** |  | 5.5d | 2020-01-02 14:00 | 2020-01-10 09:00 |  | 0d |  |  | 88h |
| 565 | 1.5.1 | **后端开发** |  | 4d | 2020-01-02 14:00 | 2020-01-08 14:00 |  | 0d |  |  | 36h |
| 566 | 1.5.1.1 | 医院信息转换任务联调（从临时表到MCP业务表） |  | 0.5d | 2020-01-02 14:00 | 2020-01-03 09:00 | 312 | 0d |  | 文超 | 4h |
| 567 | 1.5.1.2 | 医院供应商关系转换任务（从临时表到MCP业务表） |  | 0.5d | 2020-01-03 09:00 | 2020-01-03 14:00 | 566 | 0d |  | 文超 | 4h |
| 568 | 1.5.1.3 | 医院库房转换任务（从临时表到MCP业务表） |  | 0.5d | 2020-01-03 14:00 | 2020-01-06 09:00 | 567 | 0d |  | 文超 | 4h |
| 569 | 1.5.1.4 | 供应商商品转换任务（从MCP业务表到临时表） |  | 0.5d | 2020-01-06 09:00 | 2020-01-06 14:00 | 568 | 0d |  | 文超 | 4h |
| 570 | 1.5.1.5 | 医院商品转换任务（从临时表到MCP业务表） |  | 0.5d | 2020-01-06 14:00 | 2020-01-07 09:00 | 569 | 0d |  | 文超 | 4h |
| 571 | 1.5.1.6 | 采购单（主细单）转换任务（从临时到MCP业务表） |  | 0.5d | 2020-01-06 14:00 | 2020-01-07 09:00 | 324 | 4d | 0d | 杨朝辉 | 4h |
| 572 | 1.5.1.7 | 收货单（主细单）转换任务（从MCP业务表到临时表） |  | 0.5d | 2020-01-07 09:00 | 2020-01-07 14:00 | 571 | 4d | 0d | 杨朝辉 | 4h |
| 573 | 1.5.1.8 | 验收单（主细单）转换任务（从临时表到MCP业务表） |  | 0.5d | 2020-01-07 14:00 | 2020-01-08 09:00 | 572 | 4d | 0d | 杨朝辉 | 4h |
| 574 | 1.5.1.9 | 退货单（主细单）转换任务（从临时表到MCP业务表） |  | 0.5d | 2020-01-08 09:00 | 2020-01-08 14:00 | 573 | 4d | 0d | 杨朝辉 | 4h |
| 575 | 1.5.2 | **外部系统联调** |  | 3d | 2020-01-07 09:00 | 2020-01-10 09:00 |  | 0d |  |  | 52h |
| 576 | 1.5.2.1 | 医院信息数据上传（ETL数据同步，从SPD到MCP临时表） |  | 0.5d | 2020-01-08 14:00 | 2020-01-09 09:00 | 327 | 4d | 0d | 杨迎 | 4h |
| 577 | 1.5.2.2 | 医院供应商关系数据上传（ETL数据同步，从SPD到MCP临时表） |  | 0.5d | 2020-01-09 09:00 | 2020-01-09 14:00 | 576 | 4d | 0d | 杨迎 | 4h |
| 578 | 1.5.2.3 | 医院库房数据上传（ETL数据同步，从SPD到MCP临时表） |  | 0.5d | 2020-01-09 14:00 | 2020-01-10 09:00 | 577 | 4d |  | 杨迎 | 4h |
| 579 | 1.5.2.4 | 供应商商品数据下发（ETL数据同步，从MCP临时表到SPD） |  | 0.5d | 2020-01-08 14:00 | 2020-01-09 09:00 | 574 | 4d | 0d | 杨朝辉 | 4h |
| 580 | 1.5.2.5 | 医院商品数据上传（ETL数据同步，从SPD到MCP临时表） |  | 0.5d | 2020-01-09 09:00 | 2020-01-09 14:00 | 579 | 4d | 0d | 杨朝辉 | 4h |
| 581 | 1.5.2.6 | 采购主单数据上传（ETL数据同步，从SPD到MCP临时表） |  | 0.5d | 2020-01-09 14:00 | 2020-01-10 09:00 | 580 | 4d |  | 杨朝辉 | 4h |
| 582 | 1.5.2.7 | 采购细单数据上传（ETL数据同步，从SPD到MCP临时表） |  | 0.5d | 2020-01-08 14:00 | 2020-01-09 09:00 | 327 | 4d | 0d | 郑海文 | 4h |
| 583 | 1.5.2.8 | 收货主单数据下发（ETL数据同步，从MCP临时表到SPD） |  | 0.5d | 2020-01-09 09:00 | 2020-01-09 14:00 | 582 | 4d | 0d | 郑海文 | 4h |
| 584 | 1.5.2.9 | 收货细单数据下发（ETL数据同步，从MCP临时表到SPD） |  | 0.5d | 2020-01-09 14:00 | 2020-01-10 09:00 | 583 | 4d |  | 郑海文 | 4h |
| 585 | 1.5.2.10 | 验收主单数据上传（ETL数据同步，从SPD到MCP临时表） |  | 0.5d | 2020-01-07 09:00 | 2020-01-07 14:00 | 570 | 0d |  | 文超 | 4h |
| 586 | 1.5.2.11 | 验收细单数据上传（ETL数据同步，从SPD到MCP临时表） |  | 0.5d | 2020-01-07 14:00 | 2020-01-08 09:00 | 585 | 0d |  | 文超 | 4h |
| 587 | 1.5.2.12 | 退货主单数据上传（ETL数据同步，从SPD到MCP临时表） |  | 0.5d | 2020-01-08 09:00 | 2020-01-08 14:00 | 586 | 0d |  | 文超 | 4h |
| 588 | 1.5.2.13 | 退货细单数据上传（ETL数据同步，从SPD到MCP临时表） |  | 0.5d | 2020-01-08 14:00 | 2020-01-09 09:00 | 587 | 0d |  | 文超 | 4h |

| ID | WBS | Task | Duration | Start | Finish | Predecessors | Total slack | Resources | Work |
| --- | --- | --- | --- | --- | --- | --- | --- | --- | --- |
| 589 | 1.6 | **系统集成测试** | 5d | 2020-01-09 09:00 | 2020-01-16 09:00 |  | 0d |  | 40h |
| 590 | 1.6.1 | 封闭测试 | 3d | 2020-01-09 09:00 | 2020-01-14 09:00 | 588 | 0d | 产品测试团队 | 24h |
| 591 | 1.6.2 | bug修复回归测试 | 2d | 2020-01-14 09:00 | 2020-01-16 09:00 | 590 | 0d | 产品研发 | 16h |
